# 城院帮项目计划G04

How a schedule from MS Project changed from version to version. A marks actual dates.

## Version 1 (saved 2026-11-04)

Note of the change: Merge pull request #2 from jason-bitc/docs/wc-documents-sync

| ID | WBS | Task | Duration | Start | Finish | Predecessors | Total float | Constraint |
| --- | --- | --- | --- | --- | --- | --- | --- | --- |
| 1 | 1 | **1 项目计划与评审** | 6d | 2026-10-08 09:00 | 2026-10-15 18:00 |  | 0d |  |
| 2 | 1.1 | **1.1 任务分解、排期与资源预算** | 1d | 2026-10-08 09:00 | 2026-10-08 18:00 |  | 0d |  |
| 3 |  | 1.1.1 确认WBS、依赖与提交边界 | 0.5d | 2026-10-08 09:00 | 2026-10-08 13:00 |  | 0d | start no earlier than 2026-10-08 09:00 |
| 4 |  | 1.1.2 建立资源预算与风险安排 | 0.5d | 2026-10-08 14:00 | 2026-10-08 18:00 | 3 | 0d | start no earlier than 2026-10-08 14:00 |
| 5 | 1.2 | **1.2 项目计划内部复核与汇报材料** | 1d | 2026-10-09 09:00 | 2026-10-09 18:00 |  | 0d |  |
| 6 |  | 1.2.1 逐条检查评审要求与计划 | 0.5d | 2026-10-09 09:00 | 2026-10-09 13:00 | 4 | 0d | start no earlier than 2026-10-09 09:00 |
| 7 |  | 1.2.2 确认汇报材料与提交清单 | 0.5d | 2026-10-09 14:00 | 2026-10-09 18:00 | 6 | 0d | start no earlier than 2026-10-09 14:00 |
| 8 | 1.3 | **1.3 项目计划评审反馈与修订** | 1d | 2026-10-15 09:00 | 2026-10-15 18:00 |  | 0d |  |
| 9 |  | 1.3.1 登记课堂计划意见与影响 | 0.5d | 2026-10-15 09:00 | 2026-10-15 13:00 | 7 | 0d | start no earlier than 2026-10-15 09:00 |
| 10 |  | 1.3.2 共同修订排期与计划基线 | 0.5d | 2026-10-15 14:00 | 2026-10-15 18:00 | 9 | 0d | start no earlier than 2026-10-15 14:00 |
| 11 | 2 | **2 可行性研究** | 6d | 2026-10-08 09:00 | 2026-10-15 18:00 |  | 0d |  |
| 12 | 2.1 | **2.1 关键技术与工具可行性验证** | 3d | 2026-10-08 09:00 | 2026-10-12 18:00 |  | 0d |  |
| 13 | 2.1.1 | **2.1.1 验证双端构建与邮箱条件** | 1d | 2026-10-08 09:00 | 2026-10-08 18:00 |  | 0d | start no earlier than 2026-10-08 09:00 |
| 14 | 2.1.1.1 | **2.1.1.1 FS01 复查系统规模和目标** | 0.5d | 2026-10-08 09:00 | 2026-10-08 13:00 |  | 0d | start no earlier than 2026-10-08 09:00 |
| 15 |  | 2.1.1.1.1 FS01.1 明确使用者 | 0.1d | 2026-10-08 09:00 | 2026-10-08 09:48 |  | 0d | start no earlier than 2026-10-08 09:00 |
| 16 |  | 2.1.1.1.2 FS01.2 限定业务边界 | 0.1d | 2026-10-08 09:48 | 2026-10-08 10:36 | 15 | 0d | start no earlier than 2026-10-08 09:48 |
| 17 |  | 2.1.1.1.3 FS01.3 划分访问权限 | 0.1d | 2026-10-08 10:36 | 2026-10-08 11:24 | 16 | 0d | start no earlier than 2026-10-08 10:36 |
| 18 |  | 2.1.1.1.4 FS01.4 把目标写成检查项 | 0.1d | 2026-10-08 11:24 | 2026-10-08 12:12 | 17 | 0d | start no earlier than 2026-10-08 11:24 |
| 19 |  | 2.1.1.1.5 FS01.5 核对规模和约束 | 0.1d | 2026-10-08 12:12 | 2026-10-08 13:00 | 18 | 0d | start no earlier than 2026-10-08 12:12 |
| 20 | 2.1.1.2 | **2.1.1.2 FS02 研究目前正在使用的系统** | 0.5d | 2026-10-08 14:00 | 2026-10-08 18:00 | 14 | 0d | start no earlier than 2026-10-08 14:00 |
| 21 |  | 2.1.1.2.1 FS02.1 列出当前渠道 | 0.1d | 2026-10-08 14:00 | 2026-10-08 14:48 | 14 | 0d | start no earlier than 2026-10-08 14:00 |
| 22 |  | 2.1.1.2.2 FS02.2 保留已有有效能力 | 0.1d | 2026-10-08 14:48 | 2026-10-08 15:36 | 21 | 0d | start no earlier than 2026-10-08 14:48 |
| 23 |  | 2.1.1.2.3 FS02.3 还原当前处理步骤 | 0.1d | 2026-10-08 15:36 | 2026-10-08 16:24 | 22 | 0d | start no earlier than 2026-10-08 15:36 |
| 24 |  | 2.1.1.2.4 FS02.4 定位信息断点 | 0.1d | 2026-10-08 16:24 | 2026-10-08 17:12 | 23 | 0d | start no earlier than 2026-10-08 16:24 |
| 25 |  | 2.1.1.2.5 FS02.5 把不足变成改进输入 | 0.1d | 2026-10-08 17:12 | 2026-10-08 18:00 | 24 | 0d | start no earlier than 2026-10-08 17:12 |
| 26 | 2.1.2 | **2.1.2 核查独立运维、存储与恢复路径** | 2d | 2026-10-09 09:00 | 2026-10-12 18:00 | 13 | 0d | start no earlier than 2026-10-09 09:00 |
| 27 | 2.1.2.1 | **2.1.2.1 FS03 导出新系统的高层逻辑模型** | 1d | 2026-10-09 09:00 | 2026-10-09 18:00 | 20 | 0d | start no earlier than 2026-10-09 09:00 |
| 28 |  | 2.1.2.1.1 FS03.1 抽去现状工具名称 | 0.2d | 2026-10-09 09:00 | 2026-10-09 10:36 | 20 | 0d | start no earlier than 2026-10-09 09:00 |
| 29 |  | 2.1.2.1.2 FS03.2 定义系统边界 | 0.16d | 2026-10-09 10:36 | 2026-10-09 11:53 | 28 | 0d | start no earlier than 2026-10-09 10:36 |
| 30 |  | 2.1.2.1.3 FS03.3 明确输入与输出 | 0.16d | 2026-10-09 11:53 | 2026-10-09 14:10 | 29 | 0d | start no earlier than 2026-10-09 11:53 |
| 31 |  | 2.1.2.1.4 FS03.4 分解主要逻辑处理 | 0.16d | 2026-10-09 14:10 | 2026-10-09 15:27 | 30 | 0d | start no earlier than 2026-10-09 14:10 |
| 32 |  | 2.1.2.1.5 FS03.5 建立字典并检查平衡 | 0.16d | 2026-10-09 15:27 | 2026-10-09 16:44 | 31 | 0d | start no earlier than 2026-10-09 15:27 |
| 33 |  | 2.1.2.1.6 FS03.6 推导目标物理实现 | 0.16d | 2026-10-09 16:44 | 2026-10-09 18:00 | 32 | 0d | start no earlier than 2026-10-09 16:44 |
| 34 | 2.1.2.2 | **2.1.2.2 FS04 进一步定义问题** | 1d | 2026-10-12 09:00 | 2026-10-12 18:00 | 27 | 0d | start no earlier than 2026-10-12 09:00 |
| 35 |  | 2.1.2.2.1 FS04.1 重写核心问题 | 0.2d | 2026-10-12 09:00 | 2026-10-12 10:36 | 27 | 0d | start no earlier than 2026-10-12 09:00 |
| 36 |  | 2.1.2.2.2 FS04.2 拆开问题与解决手段 | 0.2d | 2026-10-12 10:36 | 2026-10-12 12:12 | 35 | 0d | start no earlier than 2026-10-12 10:36 |
| 37 |  | 2.1.2.2.3 FS04.3 收紧本期范围 | 0.2d | 2026-10-12 12:12 | 2026-10-12 14:48 | 36 | 0d | start no earlier than 2026-10-12 12:12 |
| 38 |  | 2.1.2.2.4 FS04.4 补充反例和限制 | 0.2d | 2026-10-12 14:48 | 2026-10-12 16:24 | 37 | 0d | start no earlier than 2026-10-12 14:48 |
| 39 |  | 2.1.2.2.5 FS04.5 形成反馈和关闭方式 | 0.2d | 2026-10-12 16:24 | 2026-10-12 18:00 | 38 | 0d | start no earlier than 2026-10-12 16:24 |
| 40 | 2.2 | **2.2 经济、操作及内容供给分析** | 2d | 2026-10-12 09:00 | 2026-10-13 18:00 |  | 0d |  |
| 41 | 2.2.1 | **2.2.1 核查工具、设备与现金费用** | 1d | 2026-10-12 09:00 | 2026-10-12 18:00 | 7 | 0d | start no earlier than 2026-10-12 09:00 |
| 42 | 2.2.1.1 | **2.2.1.1 FS05 导出和评价供选择的解法** | 1d | 2026-10-12 09:00 | 2026-10-12 18:00 | 27 | 0d | start no earlier than 2026-10-12 09:00 |
| 43 |  | 2.2.1.1.1 FS05.1 形成六类解法 | 0.2d | 2026-10-12 09:00 | 2026-10-12 10:36 | 27 | 0d | start no earlier than 2026-10-12 09:00 |
| 44 |  | 2.2.1.1.2 FS05.2 使用同一评价基准 | 0.16d | 2026-10-12 10:36 | 2026-10-12 11:53 | 43 | 0d | start no earlier than 2026-10-12 10:36 |
| 45 |  | 2.2.1.1.3 FS05.3 逐项比较小程序与App | 0.16d | 2026-10-12 11:53 | 2026-10-12 14:10 | 44 | 0d | start no earlier than 2026-10-12 11:53 |
| 46 |  | 2.2.1.1.4 FS05.4 评估成员与工具能力 | 0.16d | 2026-10-12 14:10 | 2026-10-12 15:27 | 45 | 0d | start no earlier than 2026-10-12 14:10 |
| 47 |  | 2.2.1.1.5 FS05.5 换算工作量和人工成本 | 0.16d | 2026-10-12 15:27 | 2026-10-12 16:44 | 46 | 0d | start no earlier than 2026-10-12 15:27 |
| 48 |  | 2.2.1.1.6 FS05.6 计算并解释评分 | 0.16d | 2026-10-12 16:44 | 2026-10-12 18:00 | 47 | 0d | start no earlier than 2026-10-12 16:44 |
| 49 | 2.2.2 | **2.2.2 分析资料来源、作者邀请与操作成本** | 1d | 2026-10-13 09:00 | 2026-10-13 18:00 | 41 | 0d | start no earlier than 2026-10-13 09:00 |
| 50 | 2.2.2.1 | **2.2.2.1 FS06 推荐行动方针** | 1d | 2026-10-13 09:00 | 2026-10-13 18:00 | 34, 42 | 0d | start no earlier than 2026-10-13 09:00 |
| 51 |  | 2.2.2.1.1 FS06.1 明确继续与否 | 0.2d | 2026-10-13 09:00 | 2026-10-13 10:36 | 34, 42 | 0d | start no earlier than 2026-10-13 09:00 |
| 52 |  | 2.2.2.1.2 FS06.2 给出推荐理由 | 0.2d | 2026-10-13 10:36 | 2026-10-13 12:12 | 51 | 0d | start no earlier than 2026-10-13 10:36 |
| 53 |  | 2.2.2.1.3 FS06.3 说明备选方针 | 0.2d | 2026-10-13 12:12 | 2026-10-13 14:48 | 52 | 0d | start no earlier than 2026-10-13 12:12 |
| 54 |  | 2.2.2.1.4 FS06.4 定义继续条件 | 0.2d | 2026-10-13 14:48 | 2026-10-13 16:24 | 53 | 0d | start no earlier than 2026-10-13 14:48 |
| 55 |  | 2.2.2.1.5 FS06.5 定义调整触发点 | 0.2d | 2026-10-13 16:24 | 2026-10-13 18:00 | 54 | 0d | start no earlier than 2026-10-13 16:24 |
| 56 | 2.3 | **2.3 可行性报告与内部评审** | 2d | 2026-10-14 09:00 | 2026-10-15 18:00 |  | 0d |  |
| 57 | 2.3.1 | **2.3.1 双方汇总技术与资源判断** | 1d | 2026-10-14 09:00 | 2026-10-14 18:00 | 26, 49 | 0d | start no earlier than 2026-10-14 09:00 |
| 58 | 2.3.1.1 | **2.3.1.1 FS07 草拟开发计划书** | 1d | 2026-10-14 09:00 | 2026-10-14 18:00 | 50 | 0d | start no earlier than 2026-10-14 09:00 |
| 59 |  | 2.3.1.1.1 FS07.1 分解交付工作 | 0.17d | 2026-10-14 09:00 | 2026-10-14 10:20 | 50 | 0d | start no earlier than 2026-10-14 09:00 |
| 60 |  | 2.3.1.1.2 FS07.2 估算人时与人员分配 | 0.17d | 2026-10-14 10:20 | 2026-10-14 11:40 | 59 | 0d | start no earlier than 2026-10-14 10:20 |
| 61 |  | 2.3.1.1.3 FS07.3 建立依赖与排期 | 0.17d | 2026-10-14 11:40 | 2026-10-14 13:00 | 60 | 0d | start no earlier than 2026-10-14 11:40 |
| 62 |  | 2.3.1.1.4 FS07.4 核算成本与资源 | 0.17d | 2026-10-14 14:00 | 2026-10-14 15:20 | 61 | 0d | start no earlier than 2026-10-14 14:00 |
| 63 |  | 2.3.1.1.5 FS07.5 细排下一需求阶段 | 0.17d | 2026-10-14 15:20 | 2026-10-14 16:40 | 62 | 0d | start no earlier than 2026-10-14 15:20 |
| 64 |  | 2.3.1.1.6 FS07.6 安排监督与调整 | 0.17d | 2026-10-14 16:40 | 2026-10-14 18:00 | 63 | 0d | start no earlier than 2026-10-14 16:40 |
| 65 | 2.3.2 | **2.3.2 共同评审可行性结论与条件** | 1d | 2026-10-15 09:00 | 2026-10-15 18:00 | 57 | 0d | start no earlier than 2026-10-15 09:00 |
| 66 | 2.3.2.1 | **2.3.2.1 FS08 写文档提交审查** | 1d | 2026-10-15 09:00 | 2026-10-15 18:00 | 58 | 0d | start no earlier than 2026-10-15 09:00 |
| 67 |  | 2.3.2.1.1 FS08.1 组织完整报告 | 0.17d | 2026-10-15 09:00 | 2026-10-15 10:20 | 58 | 0d | start no earlier than 2026-10-15 09:00 |
| 68 |  | 2.3.2.1.2 FS08.2 标记版本及输入 | 0.17d | 2026-10-15 10:20 | 2026-10-15 11:40 | 67 | 0d | start no earlier than 2026-10-15 10:20 |
| 69 |  | 2.3.2.1.3 FS08.3 核对图文一致 | 0.17d | 2026-10-15 11:40 | 2026-10-15 13:00 | 68 | 0d | start no earlier than 2026-10-15 11:40 |
| 70 |  | 2.3.2.1.4 FS08.4 编制审查索引 | 0.17d | 2026-10-15 14:00 | 2026-10-15 15:20 | 69 | 0d | start no earlier than 2026-10-15 14:00 |

| ID | WBS | Task | Duration | Start | Finish | Predecessors | Total float | Constraint |
| --- | --- | --- | --- | --- | --- | --- | --- | --- |
| 71 |  | 2.3.2.1.5 FS08.5 区分记录与待办 | 0.17d | 2026-10-15 15:20 | 2026-10-15 16:40 | 70 | 0d | start no earlier than 2026-10-15 15:20 |
| 72 |  | 2.3.2.1.6 FS08.6 接收决定并闭环 | 0.17d | 2026-10-15 16:40 | 2026-10-15 18:00 | 71 | 0d | start no earlier than 2026-10-15 16:40 |
| 73 | 3 | **3 需求分析** | 14d | 2026-10-16 09:00 | 2026-11-04 18:00 |  | 0d |  |
| 74 | 3.1 | **3.1 用户场景、用例与权限边界** | 2d | 2026-10-16 09:00 | 2026-10-19 18:00 |  | 0d |  |
| 75 | 3.1.1 | **3.1.1 共同核对读者作者与管理场景** | 1d | 2026-10-16 09:00 | 2026-10-16 18:00 | 65 | 0d | start no earlier than 2026-10-16 09:00 |
| 76 |  | 3.1.1.1 RA01 确认用户类别与需求代表 | 0.5d | 2026-10-16 09:00 | 2026-10-16 13:00 | 65 | 0d | start no earlier than 2026-10-16 09:00 |
| 77 |  | 3.1.1.2 RA02 整理需求来源与情景 | 0.5d | 2026-10-16 14:00 | 2026-10-16 18:00 | 76 | 0d | start no earlier than 2026-10-16 14:00 |
| 78 | 3.1.2 | **3.1.2 确认权限矩阵与核心用例** | 1d | 2026-10-19 09:00 | 2026-10-19 18:00 | 75 | 0d | start no earlier than 2026-10-19 09:00 |
| 79 |  | 3.1.2.1 RA02 描述用例主流程与异常 | 0.5d | 2026-10-19 09:00 | 2026-10-19 13:00 | 75 | 0d | start no earlier than 2026-10-19 09:00 |
| 80 |  | 3.1.2.2 RA01 核对角色权限和边界 | 0.5d | 2026-10-19 14:00 | 2026-10-19 18:00 | 79 | 0d | start no earlier than 2026-10-19 14:00 |
| 81 | 3.2 | **3.2 功能、数据与非功能需求** | 2d | 2026-10-20 09:00 | 2026-10-21 18:00 |  | 0d |  |
| 82 | 3.2.1 | **3.2.1 细化文章交流、激励与治理规则** | 1d | 2026-10-20 09:00 | 2026-10-20 18:00 | 78 | 0d | start no earlier than 2026-10-20 09:00 |
| 83 |  | 3.2.1.1 RA01 拆分功能需求与本期范围 | 0.5d | 2026-10-20 09:00 | 2026-10-20 13:00 | 78 | 0d | start no earlier than 2026-10-20 09:00 |
| 84 |  | 3.2.1.2 RA01 明确互动激励与治理规则 | 0.5d | 2026-10-20 14:00 | 2026-10-20 18:00 | 83 | 0d | start no earlier than 2026-10-20 14:00 |
| 85 | 3.2.2 | **3.2.2 定义数据、异常与非功能验收** | 1d | 2026-10-21 09:00 | 2026-10-21 18:00 | 82 | 0d | start no earlier than 2026-10-21 09:00 |
| 86 |  | 3.2.2.1 RA01 定义数据和接口约束 | 0.31d | 2026-10-21 09:00 | 2026-10-21 11:30 | 82 | 0d | start no earlier than 2026-10-21 09:00 |
| 87 |  | 3.2.2.2 RA01 量化性能可靠性与安全指标 | 0.38d | 2026-10-21 11:30 | 2026-10-21 15:30 | 86 | 0d | start no earlier than 2026-10-21 11:30 |
| 88 |  | 3.2.2.3 RA10 定义异常和验收场景 | 0.31d | 2026-10-21 15:30 | 2026-10-21 18:00 | 87 | 0d | start no earlier than 2026-10-21 15:30 |
| 89 | 3.3 | **3.3 双端原型与场景核对** | 2d | 2026-10-20 09:00 | 2026-10-21 18:00 |  | 0d |  |
| 90 | 3.3.1 | **3.3.1 绘制双端阅读创作原型** | 1d | 2026-10-20 09:00 | 2026-10-20 18:00 | 78 | 0d | start no earlier than 2026-10-20 09:00 |
| 91 |  | 3.3.1.1 RA03 整理小程序阅读与作者界面 | 0.5d | 2026-10-20 09:00 | 2026-10-20 13:00 | 78 | 0d | start no earlier than 2026-10-20 09:00 |
| 92 |  | 3.3.1.2 RA03 整理网页创作与阅读线框 | 0.5d | 2026-10-20 14:00 | 2026-10-20 18:00 | 91 | 0d | start no earlier than 2026-10-20 14:00 |
| 93 | 3.3.2 | **3.3.2 核对社区和运维管理流程** | 1d | 2026-10-21 09:00 | 2026-10-21 18:00 | 90 | 0d | start no earlier than 2026-10-21 09:00 |
| 94 |  | 3.3.2.1 RA03 核对社区案件与关联定位 | 0.5d | 2026-10-21 09:00 | 2026-10-21 13:00 | 90 | 0d | start no earlier than 2026-10-21 09:00 |
| 95 |  | 3.3.2.2 RA03 核对独立运维与执行确认 | 0.5d | 2026-10-21 14:00 | 2026-10-21 18:00 | 94 | 0d | start no earlier than 2026-10-21 14:00 |
| 96 | 3.4 | **3.4 SRS基线与需求评审材料** | 2d | 2026-10-22 09:00 | 2026-10-23 18:00 |  | 0d |  |
| 97 | 3.4.1 | **3.4.1 共同汇总SRS与需求追踪** | 1d | 2026-10-22 09:00 | 2026-10-22 18:00 | 85, 93 | 0d | start no earlier than 2026-10-22 09:00 |
| 98 |  | 3.4.1.1 RA10 汇总功能非功能与SRS | 0.5d | 2026-10-22 09:00 | 2026-10-22 13:00 | 85, 93 | 0d | start no earlier than 2026-10-22 09:00 |
| 99 |  | 3.4.1.2 RA10 关联追踪编号与输入版本 | 0.5d | 2026-10-22 14:00 | 2026-10-22 18:00 | 98 | 0d | start no earlier than 2026-10-22 14:00 |
| 100 | 3.4.2 | **3.4.2 内部复核并准备需求汇报** | 1d | 2026-10-23 09:00 | 2026-10-23 18:00 | 97 | 0d | start no earlier than 2026-10-23 09:00 |
| 101 |  | 3.4.2.1 RA10 组织内部需求评审 | 0.5d | 2026-10-23 09:00 | 2026-10-23 13:00 | 97 | 0d | start no earlier than 2026-10-23 09:00 |
| 102 |  | 3.4.2.2 RA10 核对汇报与提交清单 | 0.5d | 2026-10-23 14:00 | 2026-10-23 18:00 | 101 | 0d | start no earlier than 2026-10-23 14:00 |
| 103 | 3.5 | **3.5 需求课堂评审反馈处理** | 0.5d | 2026-11-04 14:00 | 2026-11-04 18:00 |  | 0d |  |
| 104 | 3.5.1 | **3.5.1 记录需求复审意见** | 0.25d | 2026-11-04 14:00 | 2026-11-04 16:00 | 141 | 0d | start no earlier than 2026-11-04 14:00 |
| 105 |  | 3.5.1.1 RA10 登记课堂评审问题 | 0.12d | 2026-11-04 14:00 | 2026-11-04 15:00 | 141 | 0d | start no earlier than 2026-11-04 14:00 |
| 106 |  | 3.5.1.2 RA10 分析范围接口和排期影响 | 0.12d | 2026-11-04 15:00 | 2026-11-04 16:00 | 105 | 0d | start no earlier than 2026-11-04 15:00 |
| 107 | 3.5.2 | **3.5.2 修订需求并同步设计影响** | 0.25d | 2026-11-04 16:00 | 2026-11-04 18:00 | 104 | 0d | start no earlier than 2026-11-04 16:00 |
| 108 |  | 3.5.2.1 RA10 修订需求与未关闭问题 | 0.12d | 2026-11-04 16:00 | 2026-11-04 17:00 | 104 | 0d | start no earlier than 2026-11-04 16:00 |
| 109 |  | 3.5.2.2 RA10 向设计交接确认结果 | 0.12d | 2026-11-04 17:00 | 2026-11-04 18:00 | 108 | 0d | start no earlier than 2026-11-04 17:00 |
| 110 | 3.6 | **3.6 课件核对及三模型骨架** | 2d | 2026-10-28 09:00 | 2026-10-29 18:00 |  | 0.5d | start no earlier than 2026-10-28 09:00 |
| 111 | 3.6.1 | **3.6.1 核对课件评审表、用户及范围** | 1d | 2026-10-28 09:00 | 2026-10-28 18:00 | 100 | 0.5d | start no earlier than 2026-10-28 09:00 |
| 112 |  | 3.6.1.1 RA01 核对综合要求与未来范围 | 0.33d | 2026-10-28 09:00 | 2026-10-28 11:40 | 100 | 0.5d | start no earlier than 2026-10-28 09:00 |
| 113 |  | 3.6.1.2 RA02 核对代表来源及获取方法 | 0.33d | 2026-10-28 11:40 | 2026-10-28 15:20 | 112 | 0.5d | start no earlier than 2026-10-28 11:40 |
| 114 |  | 3.6.1.3 RA10 建立课件与评审覆盖索引 | 0.33d | 2026-10-28 15:20 | 2026-10-28 18:00 | 113 | 0.5d | start no earlier than 2026-10-28 15:20 |
| 115 | 3.6.2 | **3.6.2 建立ER与分层DFD并交叉核对** | 1d | 2026-10-29 09:00 | 2026-10-29 18:00 | 111 | 0.5d | start no earlier than 2026-10-29 09:00 |
| 116 |  | 3.6.2.1 RA04 建立ER实体属性与基数 | 0.33d | 2026-10-29 09:00 | 2026-10-29 11:40 | 111 | 0.5d | start no earlier than 2026-10-29 09:00 |
| 117 |  | 3.6.2.2 RA05 建立上下文一级和关键二级DFD | 0.42d | 2026-10-29 11:40 | 2026-10-29 16:00 | 116 | 0.5d | start no earlier than 2026-10-29 11:40 |
| 118 |  | 3.6.2.3 RA05 核对父子流平衡与边界 | 0.25d | 2026-10-29 16:00 | 2026-10-29 18:00 | 117 | 0.5d | start no earlier than 2026-10-29 16:00 |
| 119 | 3.7 | **3.7 字典规范化及行为辅助模型** | 1d | 2026-10-30 09:00 | 2026-10-30 18:00 |  | 0.5d | start no earlier than 2026-10-30 09:00 |
| 120 | 3.7.1 | **3.7.1 细化数据字典正则及规范化** | 0.5d | 2026-10-30 09:00 | 2026-10-30 13:00 | 115 | 0.5d | start no earlier than 2026-10-30 09:00 |
| 121 |  | 3.7.1.1 RA06 定义字典结构正则与语义 | 0.2d | 2026-10-30 09:00 | 2026-10-30 10:36 | 115 | 0.5d | start no earlier than 2026-10-30 09:00 |
| 122 |  | 3.7.1.2 RA07 分析函数依赖及1NF至3NF | 0.2d | 2026-10-30 10:36 | 2026-10-30 12:12 | 121 | 0.5d | start no earlier than 2026-10-30 10:36 |
| 123 |  | 3.7.1.3 RA06 核对处理逻辑与反例约束 | 0.1d | 2026-10-30 12:12 | 2026-10-30 13:00 | 122 | 0.5d | start no earlier than 2026-10-30 12:12 |
| 124 | 3.7.2 | **3.7.2 核对状态转换及辅助图形** | 0.5d | 2026-10-30 14:00 | 2026-10-30 18:00 | 120 | 0.5d | start no earlier than 2026-10-30 14:00 |
| 125 |  | 3.7.2.1 RA08 绘制STD与状态转换表 | 0.2d | 2026-10-30 14:00 | 2026-10-30 15:36 | 120 | 0.5d | start no earlier than 2026-10-30 14:00 |
| 126 |  | 3.7.2.2 RA09 绘制层次方框图 | 0.1d | 2026-10-30 15:36 | 2026-10-30 16:24 | 125 | 0.5d | start no earlier than 2026-10-30 15:36 |
| 127 |  | 3.7.2.3 RA09 绘制Warnier图 | 0.1d | 2026-10-30 16:24 | 2026-10-30 17:12 | 126 | 0.5d | start no earlier than 2026-10-30 16:24 |
| 128 |  | 3.7.2.4 RA09 编制IPO与改进IPO | 0.1d | 2026-10-30 17:12 | 2026-10-30 18:00 | 127 | 0.5d | start no earlier than 2026-10-30 17:12 |
| 129 | 3.8 | **3.8 界面线框与真实用户走查** | 1d | 2026-11-02 09:00 | 2026-11-02 18:00 |  | 0.5d | start no earlier than 2026-11-02 09:00 |
| 130 | 3.8.1 | **3.8.1 准备导航线框与用户代表任务** | 0.5d | 2026-11-02 09:00 | 2026-11-02 13:00 | 124 | 0.5d | start no earlier than 2026-11-02 09:00 |
| 131 |  | 3.8.1.1 RA03 整理青绿四页与W01至W14线框 | 0.25d | 2026-11-02 09:00 | 2026-11-02 11:00 | 124 | 0.5d | start no earlier than 2026-11-02 09:00 |
| 132 |  | 3.8.1.2 RA03 准备代表和任务走查表 | 0.25d | 2026-11-02 11:00 | 2026-11-02 13:00 | 131 | 0.5d | start no earlier than 2026-11-02 11:00 |
| 133 | 3.8.2 | **3.8.2 执行代表走查并登记修改与确认** | 0.5d | 2026-11-02 14:00 | 2026-11-02 18:00 | 130 | 0.5d | start no earlier than 2026-11-02 14:00 |
| 134 |  | 3.8.2.1 RA03 执行任务并记录原话和问题 | 0.25d | 2026-11-02 14:00 | 2026-11-02 16:00 | 130 | 0.5d | start no earlier than 2026-11-02 14:00 |
| 135 |  | 3.8.2.2 RA03 修改原型并取得复核确认 | 0.25d | 2026-11-02 16:00 | 2026-11-02 18:00 | 134 | 0.5d | start no earlier than 2026-11-02 16:00 |
| 136 | 3.9 | **3.9 需求验证追踪与阶段提交** | 1d | 2026-11-03 09:00 | 2026-11-03 18:00 |  | 0.5d | start no earlier than 2026-11-03 09:00 |
| 137 | 3.9.1 | **3.9.1 同步SRS与四维验证及追踪** | 0.5d | 2026-11-03 09:00 | 2026-11-03 13:00 | 133 | 0.5d | start no earlier than 2026-11-03 09:00 |
| 138 |  | 3.9.1.1 RA10 执行一致完整现实有效检查 | 0.2d | 2026-11-03 09:00 | 2026-11-03 10:36 | 133 | 0.5d | start no earlier than 2026-11-03 09:00 |
| 139 |  | 3.9.1.2 RA10 核对FR规则模型与验收追踪 | 0.2d | 2026-11-03 10:36 | 2026-11-03 12:12 | 138 | 0.5d | start no earlier than 2026-11-03 10:36 |
| 140 |  | 3.9.1.3 RA10 形成SRS候选版本与问题表 | 0.1d | 2026-11-03 12:12 | 2026-11-03 13:00 | 139 | 0.5d | start no earlier than 2026-11-03 12:12 |

| ID | WBS | Task | Duration | Start | Finish | Predecessors | Total float | Constraint |
| --- | --- | --- | --- | --- | --- | --- | --- | --- |
| 141 | 3.9.2 | **3.9.2 同步计划排期并核对评审提交包** | 0.5d | 2026-11-03 14:00 | 2026-11-03 18:00 | 137 | 0.5d | start no earlier than 2026-11-03 14:00 |
| 142 |  | 3.9.2.1 RA10 同步计划WBS与排期证据 | 0.2d | 2026-11-03 14:00 | 2026-11-03 15:36 | 137 | 0.5d | start no earlier than 2026-11-03 14:00 |
| 143 |  | 3.9.2.2 RA10 按两张评审表核对交付包 | 0.2d | 2026-11-03 15:36 | 2026-11-03 17:12 | 142 | 0.5d | start no earlier than 2026-11-03 15:36 |
| 144 |  | 3.9.2.3 RA10 准备讲稿与排练交接 | 0.1d | 2026-11-03 17:12 | 2026-11-03 18:00 | 143 | 0.5d | start no earlier than 2026-11-03 17:12 |
| 145 | 4 | **4 总体与详细设计** | 24d | 2026-10-26 09:00 | 2026-11-26 18:00 |  | 0d |  |
| 146 | 4.1 | **4.1 系统架构、接口与数据库设计** | 3d | 2026-10-26 09:00 | 2026-10-28 18:00 |  | 1d |  |
| 147 |  | 4.1.1 设计业务模块与接口契约 | 1d | 2026-10-26 09:00 | 2026-10-26 18:00 | 100 | 1d | start no earlier than 2026-10-26 09:00 |
| 148 |  | 4.1.2 设计数据关系与本机部署边界 | 2d | 2026-10-27 09:00 | 2026-10-28 18:00 | 147 | 1d | start no earlier than 2026-10-27 09:00 |
| 149 | 4.2 | **4.2 认证、内容、激励与治理设计** | 2d | 2026-10-29 09:00 | 2026-10-30 18:00 |  | 1d |  |
| 150 |  | 4.2.1 细化认证文章与治理状态 | 1d | 2026-10-29 09:00 | 2026-10-29 18:00 | 148 | 1d | start no earlier than 2026-10-29 09:00 |
| 151 |  | 4.2.2 细化币事务、隐私及异常处理 | 1d | 2026-10-30 09:00 | 2026-10-30 18:00 | 150 | 1d | start no earlier than 2026-10-30 09:00 |
| 152 | 4.3 | **4.3 双端浏览与创作详细设计** | 3d | 2026-10-29 09:00 | 2026-11-02 18:00 |  | 1d |  |
| 153 |  | 4.3.1 设计网页Markdown与移动图文 | 1d | 2026-10-29 09:00 | 2026-10-29 18:00 | 148 | 1d | start no earlier than 2026-10-29 09:00 |
| 154 |  | 4.3.2 设计图片、草稿和跨端编辑流程 | 2d | 2026-10-30 09:00 | 2026-11-02 18:00 | 153 | 1d | start no earlier than 2026-10-30 09:00 |
| 155 | 4.4 | **4.4 部署、备份与恢复详细设计** | 2d | 2026-11-02 09:00 | 2026-11-03 18:00 |  | 1d |  |
| 156 |  | 4.4.1 定义运维接口、鉴权与白名单 | 1d | 2026-11-02 09:00 | 2026-11-02 18:00 | 151 | 1d | start no earlier than 2026-11-02 09:00 |
| 157 |  | 4.4.2 设计备份一致性、恢复与失败保护 | 1d | 2026-11-03 09:00 | 2026-11-03 18:00 | 156 | 1d | start no earlier than 2026-11-03 09:00 |
| 158 | 4.5 | **4.5 内部设计评审与文档基线** | 1d | 2026-11-05 09:00 | 2026-11-05 18:00 |  | 0d |  |
| 159 |  | 4.5.1 共同核对总体与详细设计 | 0.5d | 2026-11-05 09:00 | 2026-11-05 13:00 | 154, 157, 163, 107 | 0d | start no earlier than 2026-11-05 09:00 |
| 160 |  | 4.5.2 共同评审并确认内部设计基线 | 0.5d | 2026-11-05 14:00 | 2026-11-05 18:00 | 159 | 0d | start no earlier than 2026-11-05 14:00 |
| 161 | 4.6 | **4.6 测试用例设计与数据准备** | 1d | 2026-11-03 09:00 | 2026-11-03 18:00 |  | 1d |  |
| 162 |  | 4.6.1 编制核心与异常验收用例 | 0.5d | 2026-11-03 09:00 | 2026-11-03 13:00 | 154, 151 | 1d | start no earlier than 2026-11-03 09:00 |
| 163 |  | 4.6.2 准备合成数据和性能脚本方案 | 0.5d | 2026-11-03 14:00 | 2026-11-03 18:00 | 162 | 1d | start no earlier than 2026-11-03 14:00 |
| 164 | 4.7 | **4.7 课堂设计反馈与模块调整** | 1d | 2026-11-26 09:00 | 2026-11-26 18:00 |  | 0d |  |
| 165 |  | 4.7.1 共同登记课堂设计意见 | 0.5d | 2026-11-26 09:00 | 2026-11-26 13:00 | 191, 200 | 0d | start no earlier than 2026-11-26 09:00 |
| 166 |  | 4.7.2 分别调整模块并共同复核 | 0.5d | 2026-11-26 14:00 | 2026-11-26 18:00 | 165 | 0d | start no earlier than 2026-11-26 14:00 |
| 167 | 5 | **5 编码与单元测试** | 16d | 2026-11-06 09:00 | 2026-11-27 18:00 |  | 0d |  |
| 168 | 5.1 | **5.1 项目骨架、配置与接口约定** | 1d | 2026-11-06 09:00 | 2026-11-06 18:00 |  | 1d |  |
| 169 |  | 5.1.1 搭建模块骨架与环境配置 | 0.5d | 2026-11-06 09:00 | 2026-11-06 13:00 | 160 | 1d | start no earlier than 2026-11-06 09:00 |
| 170 |  | 5.1.2 核对共享接口和错误格式 | 0.5d | 2026-11-06 14:00 | 2026-11-06 18:00 | 169 | 1d | start no earlier than 2026-11-06 14:00 |
| 171 | 5.2 | **5.2 登录、邮箱与材料认证** | 2d | 2026-11-09 09:00 | 2026-11-10 18:00 |  | 1d |  |
| 172 |  | 5.2.1 实现登录与校园邮箱验证 | 1d | 2026-11-09 09:00 | 2026-11-09 18:00 | 170 | 1d | start no earlier than 2026-11-09 09:00 |
| 173 |  | 5.2.2 实现材料认证接口和角色限制 | 1d | 2026-11-10 09:00 | 2026-11-10 18:00 | 172 | 1d | start no earlier than 2026-11-10 09:00 |
| 174 | 5.3 | **5.3 文章存储、岗位检索与筛选接口** | 3d | 2026-11-11 09:00 | 2026-11-13 18:00 |  | 1d |  |
| 175 |  | 5.3.1 实现文章图片、草稿存储接口 | 1d | 2026-11-11 09:00 | 2026-11-11 18:00 | 173 | 1d | start no earlier than 2026-11-11 09:00 |
| 176 |  | 5.3.2 实现岗位专业公司筛选与分页 | 2d | 2026-11-12 09:00 | 2026-11-13 18:00 | 175 | 1d | start no earlier than 2026-11-12 09:00 |
| 177 | 5.4 | **5.4 小程序与网页阅读页面** | 3d | 2026-11-06 09:00 | 2026-11-10 18:00 |  | 0d |  |
| 178 |  | 5.4.1 实现双端筛选与阅读界面 | 1d | 2026-11-06 09:00 | 2026-11-06 18:00 | 160 | 0d | start no earlier than 2026-11-06 09:00 |
| 179 |  | 5.4.2 核对游客状态、失败和空结果 | 2d | 2026-11-09 09:00 | 2026-11-10 18:00 | 178 | 0d | start no earlier than 2026-11-09 09:00 |
| 180 | 5.5 | **5.5 网页Markdown创作与草稿** | 3d | 2026-11-11 09:00 | 2026-11-13 18:00 |  | 0d |  |
| 181 |  | 5.5.1 实现Markdown、图片和资料链接 | 1d | 2026-11-11 09:00 | 2026-11-11 18:00 | 179 | 0d | start no earlier than 2026-11-11 09:00 |
| 182 |  | 5.5.2 实现预览、保存与草稿恢复 | 2d | 2026-11-12 09:00 | 2026-11-13 18:00 | 181 | 0d | start no earlier than 2026-11-12 09:00 |
| 183 | 5.6 | **5.6 小程序文字与图片创作** | 2d | 2026-11-16 09:00 | 2026-11-17 18:00 |  | 1d |  |
| 184 |  | 5.6.1 实现移动图文编辑和上传 | 1d | 2026-11-16 09:00 | 2026-11-16 18:00 | 176 | 1d | start no earlier than 2026-11-16 09:00 |
| 185 |  | 5.6.2 实现移动草稿保存及恢复 | 1d | 2026-11-17 09:00 | 2026-11-17 18:00 | 184 | 1d | start no earlier than 2026-11-17 09:00 |
| 186 | 5.7 | **5.7 双端草稿、发布与文章管理** | 2d | 2026-11-18 09:00 | 2026-11-19 18:00 |  | 1d |  |
| 187 |  | 5.7.1 实现发布、修改、下架和恢复接口 | 1d | 2026-11-18 09:00 | 2026-11-18 18:00 | 185, 182 | 1d | start no earlier than 2026-11-18 09:00 |
| 188 |  | 5.7.2 接通双端作者文章管理 | 1d | 2026-11-19 09:00 | 2026-11-19 18:00 | 187 | 1d | start no earlier than 2026-11-19 09:00 |
| 189 | 5.8 | **5.8 评论、点赞、投币、收藏与荣誉** | 3d | 2026-11-20 09:00 | 2026-11-24 18:00 |  | 1d |  |
| 190 |  | 5.8.1 实现主页、评论图片及收藏交流 | 1d | 2026-11-20 09:00 | 2026-11-20 18:00 | 188 | 1d | start no earlier than 2026-11-20 09:00 |
| 191 |  | 5.8.2 实现点赞、领取投币、荣誉排序与通知 | 2d | 2026-11-23 09:00 | 2026-11-24 18:00 | 190 | 1d | start no earlier than 2026-11-23 09:00 |
| 192 | 5.9 | **5.9 社区审核、反馈与举报网页** | 3d | 2026-11-16 09:00 | 2026-11-18 18:00 |  | 0d |  |
| 193 |  | 5.9.1 实现认证审核与举报反馈处理接口 | 1d | 2026-11-16 09:00 | 2026-11-16 18:00 | 182 | 0d | start no earlier than 2026-11-16 09:00 |
| 194 |  | 5.9.2 实现社区管理网页并联调 | 2d | 2026-11-17 09:00 | 2026-11-18 18:00 | 193 | 0d | start no earlier than 2026-11-17 09:00 |
| 195 | 5.10 | **5.10 独立运维执行与备份服务** | 3d | 2026-11-19 09:00 | 2026-11-23 18:00 |  | 0d |  |
| 196 |  | 5.10.1 实现独立运维任务执行服务 | 1d | 2026-11-19 09:00 | 2026-11-19 18:00 | 194 | 0d | start no earlier than 2026-11-19 09:00 |
| 197 |  | 5.10.2 实现部署重启、备份恢复及失败保护 | 2d | 2026-11-20 09:00 | 2026-11-23 18:00 | 196 | 0d | start no earlier than 2026-11-20 09:00 |
| 198 | 5.11 | **5.11 运维网页、状态与操作记录** | 2d | 2026-11-24 09:00 | 2026-11-25 18:00 |  | 0d |  |
| 199 |  | 5.11.1 实现运维状态、日志和备份列表 | 1d | 2026-11-24 09:00 | 2026-11-24 18:00 | 197 | 0d | start no earlier than 2026-11-24 09:00 |
| 200 |  | 5.11.2 联调网页部署重启与备份恢复 | 1d | 2026-11-25 09:00 | 2026-11-25 18:00 | 199 | 0d | start no earlier than 2026-11-25 09:00 |
| 201 | 5.12 | **5.12 系统联调、构建与实现基线** | 1d | 2026-11-27 09:00 | 2026-11-27 18:00 |  | 0d |  |
| 202 |  | 5.12.1 双方接通真实接口与跨端链路 | 0.5d | 2026-11-27 09:00 | 2026-11-27 13:00 | 166 | 0d | start no earlier than 2026-11-27 09:00 |
| 203 |  | 5.12.2 构建候选版本并归档实现证据 | 0.5d | 2026-11-27 14:00 | 2026-11-27 18:00 | 202 | 0d | start no earlier than 2026-11-27 14:00 |
| 204 | 6 | **6 综合测试** | 7d | 2026-11-30 09:00 | 2026-12-08 18:00 |  | 0d |  |
| 205 | 6.1 | **6.1 功能、接口与集成测试** | 2d | 2026-11-30 09:00 | 2026-12-01 18:00 |  | 0d |  |
| 206 |  | 6.1.1 执行角色及核心业务功能用例 | 1d | 2026-11-30 09:00 | 2026-11-30 18:00 | 203 | 0d | start no earlier than 2026-11-30 09:00 |
| 207 |  | 6.1.2 执行接口、集成和失败场景 | 1d | 2026-12-01 09:00 | 2026-12-01 18:00 | 206 | 0d | start no earlier than 2026-12-01 09:00 |
| 208 | 6.2 | **6.2 性能与负载测试** | 2d | 2026-11-30 09:00 | 2026-12-01 18:00 |  | 0d |  |
| 209 |  | 6.2.1 固定环境执行30并发负载 | 1d | 2026-11-30 09:00 | 2026-11-30 18:00 | 203 | 0d | start no earlier than 2026-11-30 09:00 |
| 210 |  | 6.2.2 分析P95、错误率与资源占用 | 1d | 2026-12-01 09:00 | 2026-12-01 18:00 | 209 | 0d | start no earlier than 2026-12-01 09:00 |

| ID | WBS | Task | Duration | Start | Finish | Predecessors | Total float | Constraint |
| --- | --- | --- | --- | --- | --- | --- | --- | --- |
| 211 | 6.3 | **6.3 压力与稳定性测试** | 1d | 2026-12-02 09:00 | 2026-12-02 18:00 |  | 0d |  |
| 212 |  | 6.3.1 执行阶梯压力寻找容量边界 | 0.5d | 2026-12-02 09:00 | 2026-12-02 13:00 | 210 | 0d | start no earlier than 2026-12-02 09:00 |
| 213 |  | 6.3.2 执行稳定性与降载恢复 | 0.5d | 2026-12-02 14:00 | 2026-12-02 18:00 | 212 | 0d | start no earlier than 2026-12-02 14:00 |
| 214 | 6.4 | **6.4 安全权限与双端兼容测试** | 1d | 2026-12-02 09:00 | 2026-12-02 18:00 |  | 0d |  |
| 215 |  | 6.4.1 执行越权隐私与危险输入检查 | 0.5d | 2026-12-02 09:00 | 2026-12-02 13:00 | 207 | 0d | start no earlier than 2026-12-02 09:00 |
| 216 |  | 6.4.2 执行双端浏览编辑与图片兼容 | 0.5d | 2026-12-02 14:00 | 2026-12-02 18:00 | 215 | 0d | start no earlier than 2026-12-02 14:00 |
| 217 | 6.5 | **6.5 部署、故障与备份恢复验证** | 1d | 2026-12-03 09:00 | 2026-12-03 18:00 |  | 0.5d |  |
| 218 |  | 6.5.1 验证冷启动与网页运维操作 | 0.5d | 2026-12-03 09:00 | 2026-12-03 13:00 | 213 | 0.5d | start no earlier than 2026-12-03 09:00 |
| 219 |  | 6.5.2 验证损坏备份、回退与恢复一致性 | 0.5d | 2026-12-03 14:00 | 2026-12-03 18:00 | 218 | 0.5d | start no earlier than 2026-12-03 14:00 |
| 220 | 6.6 | **6.6 缺陷修复、复测与回归** | 1.5d | 2026-12-03 09:00 | 2026-12-04 13:00 |  | 0d |  |
| 221 |  | 6.6.1 按模块分派缺陷并修复 | 0.5d | 2026-12-03 09:00 | 2026-12-03 13:00 | 216, 213 | 0d | start no earlier than 2026-12-03 09:00 |
| 222 |  | 6.6.2 交叉复测原场景与相邻流程 | 1d | 2026-12-03 14:00 | 2026-12-04 13:00 | 221 | 0d | start no earlier than 2026-12-03 14:00 |
| 223 | 6.7 | **6.7 测试报告与系统内部验收** | 0.5d | 2026-12-04 14:00 | 2026-12-04 18:00 |  | 0d |  |
| 224 |  | 6.7.1 双方确认测试结论与交付限制 | 0.5d | 2026-12-04 14:00 | 2026-12-04 18:00 | 222, 219 | 0d | start no earlier than 2026-12-04 14:00 |
| 225 | 6.8 | **6.8 测试报告复核与提交准备** | 2d | 2026-12-07 09:00 | 2026-12-08 18:00 |  | 0d |  |
| 226 |  | 6.8.1 复核测试报告与证据链 | 1d | 2026-12-07 09:00 | 2026-12-07 18:00 | 224 | 0d | start no earlier than 2026-12-07 09:00 |
| 227 |  | 6.8.2 整理课堂测试汇报和已有修订 | 1d | 2026-12-08 09:00 | 2026-12-08 18:00 | 226 | 0d | start no earlier than 2026-12-08 09:00 |
| 228 | 7 | **7 部署与维护** | 7d | 2026-12-09 09:00 | 2026-12-17 18:00 |  | 0d |  |
| 229 | 7.1 | **7.1 安装包、用户与维护说明** | 2d | 2026-12-09 09:00 | 2026-12-10 18:00 |  | 0d |  |
| 230 |  | 7.1.1 整理安装、用户及管理操作说明 | 1d | 2026-12-09 09:00 | 2026-12-09 18:00 | 227 | 0d | start no earlier than 2026-12-09 09:00 |
| 231 |  | 7.1.2 整理运维、恢复与故障维护规程 | 1d | 2026-12-10 09:00 | 2026-12-10 18:00 | 230 | 0d | start no earlier than 2026-12-10 09:00 |
| 232 | 7.2 | **7.2 干净环境启动与课堂演示** | 1d | 2026-12-11 09:00 | 2026-12-11 18:00 |  | 0d |  |
| 233 |  | 7.2.1 在干净配置核对冷启动 | 0.5d | 2026-12-11 09:00 | 2026-12-11 13:00 | 231 | 0d | start no earlier than 2026-12-11 09:00 |
| 234 |  | 7.2.2 核对演示数据、认证与外网失败回退 | 0.5d | 2026-12-11 14:00 | 2026-12-11 18:00 | 233 | 0d | start no earlier than 2026-12-11 14:00 |
| 235 | 7.3 | **7.3 维护申请与变更演练** | 1d | 2026-12-14 09:00 | 2026-12-14 18:00 |  | 0d |  |
| 236 |  | 7.3.1 登记维护申请和影响分析 | 0.5d | 2026-12-14 09:00 | 2026-12-14 13:00 | 234 | 0d | start no earlier than 2026-12-14 09:00 |
| 237 |  | 7.3.2 执行修改回退及回归演练 | 0.5d | 2026-12-14 14:00 | 2026-12-14 18:00 | 236 | 0d | start no earlier than 2026-12-14 14:00 |
| 238 | 7.4 | **7.4 运维交接与反馈整改** | 1d | 2026-12-15 09:00 | 2026-12-15 18:00 |  | 0d |  |
| 239 |  | 7.4.1 核对备份、配置与维护资料 | 0.5d | 2026-12-15 09:00 | 2026-12-15 13:00 | 237 | 0d | start no earlier than 2026-12-15 09:00 |
| 240 |  | 7.4.2 双方练习操作并确认交接 | 0.5d | 2026-12-15 14:00 | 2026-12-15 18:00 | 239 | 0d | start no earlier than 2026-12-15 14:00 |
| 241 | 7.5 | **7.5 课堂测试评审意见处理** | 1d | 2026-12-17 09:00 | 2026-12-17 18:00 |  | 0d |  |
| 242 |  | 7.5.1 登记12月16日测试评审意见 | 0.5d | 2026-12-17 09:00 | 2026-12-17 13:00 | 227 | 0d | start no earlier than 2026-12-17 09:00 |
| 243 |  | 7.5.2 修订报告及相关实现用例 | 0.5d | 2026-12-17 14:00 | 2026-12-17 18:00 | 242 | 0d | start no earlier than 2026-12-17 14:00 |
| 244 | 8 | **8 总结与收尾** | 13d | 2026-12-18 09:00 | 2027-01-06 18:00 |  | 0d |  |
| 245 | 8.1 | **8.1 项目总结与计划偏差分析** | 2d | 2026-12-18 09:00 | 2026-12-21 18:00 |  | 0d |  |
| 246 |  | 8.1.1 共同核对计划实际与阶段成果 | 1d | 2026-12-18 09:00 | 2026-12-18 18:00 | 240, 243 | 0d | start no earlier than 2026-12-18 09:00 |
| 247 |  | 8.1.2 共同总结偏差风险和协作贡献 | 1d | 2026-12-21 09:00 | 2026-12-21 18:00 | 246 | 0d | start no earlier than 2026-12-21 09:00 |
| 248 | 8.2 | **8.2 总评材料与详细计划附录** | 2d | 2026-12-22 09:00 | 2026-12-23 18:00 |  | 0d |  |
| 249 |  | 8.2.1 整理总评PPT资料和详细周计划 | 1d | 2026-12-22 09:00 | 2026-12-22 18:00 | 247 | 0d | start no earlier than 2026-12-22 09:00 |
| 250 |  | 8.2.2 核对引用、图表与交付目录 | 1d | 2026-12-23 09:00 | 2026-12-23 18:00 | 249 | 0d | start no earlier than 2026-12-23 09:00 |
| 251 | 8.3 | **8.3 最终验收与汇报演练** | 1d | 2026-12-24 09:00 | 2026-12-24 18:00 |  | 0d |  |
| 252 |  | 8.3.1 共同执行交付清单核查 | 0.5d | 2026-12-24 09:00 | 2026-12-24 13:00 | 250 | 0d | start no earlier than 2026-12-24 09:00 |
| 253 |  | 8.3.2 共同预演并确认提交版本 | 0.5d | 2026-12-24 14:00 | 2026-12-24 18:00 | 252 | 0d | start no earlier than 2026-12-24 14:00 |
| 254 | 8.4 | **8.4 总评反馈处理与归档** | 2d | 2026-12-31 09:00 | 2027-01-04 18:00 |  | 0d |  |
| 255 |  | 8.4.1 处理总评意见并准备提交基线 | 1d | 2026-12-31 09:00 | 2026-12-31 18:00 | 253 | 0d | start no earlier than 2026-12-31 09:00 |
| 256 |  | 8.4.2 核对提交后尾项与最终归档 | 1d | 2027-01-04 09:00 | 2027-01-04 18:00 | 255 | 0d | start no earlier than 2027-01-04 09:00 |
| 257 | 8.5 | **8.5 课程收尾与交付确认** | 1d | 2027-01-06 09:00 | 2027-01-06 18:00 |  | 0d |  |
| 258 |  | 8.5.1 共同核对课程收尾材料 | 0.5d | 2027-01-06 09:00 | 2027-01-06 13:00 | 256 | 0d | start no earlier than 2027-01-06 09:00 |
| 259 |  | 8.5.2 共同确认交付与后续维护边界 | 0.5d | 2027-01-06 14:00 | 2027-01-06 18:00 | 258 | 0d | start no earlier than 2027-01-06 14:00 |
| 260 | M | **M 持续项目管理与交叉复核** | 64d | 2026-10-08 09:00 | 2027-01-06 18:00 |  | 0d |  |
| 261 |  | M01 周进度风险与评审提交管理 | 2d | 2026-10-08 09:00 | 2026-10-09 18:00 |  | 62d | start no earlier than 2026-10-08 09:00 |
| 262 |  | M02 周进度风险与评审提交管理 | 5d | 2026-10-12 09:00 | 2026-10-16 18:00 |  | 57d | start no earlier than 2026-10-12 09:00 |
| 263 |  | M03 周进度风险与评审提交管理 | 5d | 2026-10-19 09:00 | 2026-10-23 18:00 |  | 52d | start no earlier than 2026-10-19 09:00 |
| 264 |  | M04 周进度风险与评审提交管理 | 5d | 2026-10-26 09:00 | 2026-10-30 18:00 |  | 47d | start no earlier than 2026-10-26 09:00 |
| 265 |  | M05 周进度风险与评审提交管理 | 5d | 2026-11-02 09:00 | 2026-11-06 18:00 |  | 42d | start no earlier than 2026-11-02 09:00 |
| 266 |  | M06 周进度风险与评审提交管理 | 5d | 2026-11-09 09:00 | 2026-11-13 18:00 |  | 37d | start no earlier than 2026-11-09 09:00 |
| 267 |  | M07 周进度风险与评审提交管理 | 5d | 2026-11-16 09:00 | 2026-11-20 18:00 |  | 32d | start no earlier than 2026-11-16 09:00 |
| 268 |  | M08 周进度风险与评审提交管理 | 5d | 2026-11-23 09:00 | 2026-11-27 18:00 |  | 27d | start no earlier than 2026-11-23 09:00 |
| 269 |  | M09 周进度风险与评审提交管理 | 5d | 2026-11-30 09:00 | 2026-12-04 18:00 |  | 22d | start no earlier than 2026-11-30 09:00 |
| 270 |  | M10 周进度风险与评审提交管理 | 5d | 2026-12-07 09:00 | 2026-12-11 18:00 |  | 17d | start no earlier than 2026-12-07 09:00 |
| 271 |  | M11 周进度风险与评审提交管理 | 5d | 2026-12-14 09:00 | 2026-12-18 18:00 |  | 12d | start no earlier than 2026-12-14 09:00 |
| 272 |  | M12 周进度风险与评审提交管理 | 5d | 2026-12-21 09:00 | 2026-12-25 18:00 |  | 7d | start no earlier than 2026-12-21 09:00 |
| 273 |  | M13 周进度风险与评审提交管理 | 4d | 2026-12-28 09:00 | 2026-12-31 18:00 |  | 3d | start no earlier than 2026-12-28 09:00 |
| 274 |  | M14 周进度风险与评审提交管理 | 3d | 2027-01-04 09:00 | 2027-01-06 18:00 |  | 0d | start no earlier than 2027-01-04 09:00 |
| 275 |  | R2.1 复核与交接 关键技术与工具可行性验证 | 3d | 2026-10-08 09:00 | 2026-10-12 18:00 |  | 61d | start no earlier than 2026-10-08 09:00 |
| 276 |  | R2.2 复核与交接 经济、操作及内容供给分析 | 2d | 2026-10-12 09:00 | 2026-10-13 18:00 |  | 60d | start no earlier than 2026-10-12 09:00 |
| 277 |  | R3.2 复核与交接 功能、数据与非功能需求 | 2d | 2026-10-20 09:00 | 2026-10-21 18:00 |  | 54d | start no earlier than 2026-10-20 09:00 |
| 278 |  | R3.3 复核与交接 双端原型与场景核对 | 2d | 2026-10-20 09:00 | 2026-10-21 18:00 |  | 54d | start no earlier than 2026-10-20 09:00 |
| 279 |  | R3.5 复核与交接 需求课堂评审反馈处理 | 0.5d | 2026-11-04 14:00 | 2026-11-04 18:00 |  | 44d | start no earlier than 2026-11-04 14:00 |
| 280 |  | R4.1 复核与交接 系统架构、接口与数据库设计 | 3d | 2026-10-26 09:00 | 2026-10-28 18:00 |  | 49d | start no earlier than 2026-10-26 09:00 |

| ID | WBS | Task | Duration | Start | Finish | Total float | Constraint |
| --- | --- | --- | --- | --- | --- | --- | --- |
| 281 |  | R4.2 复核与交接 认证、内容、激励与治理设计 | 2d | 2026-10-29 09:00 | 2026-10-30 18:00 | 47d | start no earlier than 2026-10-29 09:00 |
| 282 |  | R4.3 复核与交接 双端浏览与创作详细设计 | 3d | 2026-10-29 09:00 | 2026-11-02 18:00 | 46d | start no earlier than 2026-10-29 09:00 |
| 283 |  | R4.4 复核与交接 部署、备份与恢复详细设计 | 2d | 2026-11-02 09:00 | 2026-11-03 18:00 | 45d | start no earlier than 2026-11-02 09:00 |
| 284 |  | R4.6 复核与交接 测试用例设计与数据准备 | 1d | 2026-11-03 09:00 | 2026-11-03 18:00 | 45d | start no earlier than 2026-11-03 09:00 |
| 285 |  | R5.1 复核与交接 项目骨架、配置与接口约定 | 1d | 2026-11-06 09:00 | 2026-11-06 18:00 | 42d | start no earlier than 2026-11-06 09:00 |
| 286 |  | R5.2 复核与交接 登录、邮箱与材料认证 | 2d | 2026-11-09 09:00 | 2026-11-10 18:00 | 40d | start no earlier than 2026-11-09 09:00 |
| 287 |  | R5.3 复核与交接 文章存储、岗位检索与筛选接口 | 3d | 2026-11-11 09:00 | 2026-11-13 18:00 | 37d | start no earlier than 2026-11-11 09:00 |
| 288 |  | R5.4 复核与交接 小程序与网页阅读页面 | 3d | 2026-11-06 09:00 | 2026-11-10 18:00 | 40d | start no earlier than 2026-11-06 09:00 |
| 289 |  | R5.5 复核与交接 网页Markdown创作与草稿 | 3d | 2026-11-11 09:00 | 2026-11-13 18:00 | 37d | start no earlier than 2026-11-11 09:00 |
| 290 |  | R5.6 复核与交接 小程序文字与图片创作 | 2d | 2026-11-16 09:00 | 2026-11-17 18:00 | 35d | start no earlier than 2026-11-16 09:00 |
| 291 |  | R5.7 复核与交接 双端草稿、发布与文章管理 | 2d | 2026-11-18 09:00 | 2026-11-19 18:00 | 33d | start no earlier than 2026-11-18 09:00 |
| 292 |  | R5.8 复核与交接 评论、点赞、投币、收藏与荣誉 | 3d | 2026-11-20 09:00 | 2026-11-24 18:00 | 30d | start no earlier than 2026-11-20 09:00 |
| 293 |  | R5.9 复核与交接 社区审核、反馈与举报网页 | 3d | 2026-11-16 09:00 | 2026-11-18 18:00 | 34d | start no earlier than 2026-11-16 09:00 |
| 294 |  | R5.10 复核与交接 独立运维执行与备份服务 | 3d | 2026-11-19 09:00 | 2026-11-23 18:00 | 31d | start no earlier than 2026-11-19 09:00 |
| 295 |  | R5.11 复核与交接 运维网页、状态与操作记录 | 2d | 2026-11-24 09:00 | 2026-11-25 18:00 | 29d | start no earlier than 2026-11-24 09:00 |
| 296 |  | R6.1 复核与交接 功能、接口与集成测试 | 2d | 2026-11-30 09:00 | 2026-12-01 18:00 | 25d | start no earlier than 2026-11-30 09:00 |
| 297 |  | R6.2 复核与交接 性能与负载测试 | 2d | 2026-11-30 09:00 | 2026-12-01 18:00 | 25d | start no earlier than 2026-11-30 09:00 |
| 298 |  | R6.3 复核与交接 压力与稳定性测试 | 1d | 2026-12-02 09:00 | 2026-12-02 18:00 | 24d | start no earlier than 2026-12-02 09:00 |
| 299 |  | R6.4 复核与交接 安全权限与双端兼容测试 | 1d | 2026-12-02 09:00 | 2026-12-02 18:00 | 24d | start no earlier than 2026-12-02 09:00 |
| 300 |  | R6.5 复核与交接 部署、故障与备份恢复验证 | 1d | 2026-12-03 09:00 | 2026-12-03 18:00 | 23d | start no earlier than 2026-12-03 09:00 |
| 301 |  | R6.6 复核与交接 缺陷修复、复测与回归 | 1.5d | 2026-12-03 09:00 | 2026-12-04 13:00 | 22.5d | start no earlier than 2026-12-03 09:00 |
| 302 |  | R6.8 复核与交接 测试报告复核与提交准备 | 2d | 2026-12-07 09:00 | 2026-12-08 18:00 | 20d | start no earlier than 2026-12-07 09:00 |
| 303 |  | R7.1 复核与交接 安装包、用户与维护说明 | 2d | 2026-12-09 09:00 | 2026-12-10 18:00 | 18d | start no earlier than 2026-12-09 09:00 |
| 304 |  | R7.2 复核与交接 干净环境启动与课堂演示 | 1d | 2026-12-11 09:00 | 2026-12-11 18:00 | 17d | start no earlier than 2026-12-11 09:00 |
| 305 |  | R7.3 复核与交接 维护申请与变更演练 | 1d | 2026-12-14 09:00 | 2026-12-14 18:00 | 16d | start no earlier than 2026-12-14 09:00 |
| 306 |  | R7.4 复核与交接 运维交接与反馈整改 | 1d | 2026-12-15 09:00 | 2026-12-15 18:00 | 15d | start no earlier than 2026-12-15 09:00 |
| 307 |  | R7.5 复核与交接 课堂测试评审意见处理 | 1d | 2026-12-17 09:00 | 2026-12-17 18:00 | 13d | start no earlier than 2026-12-17 09:00 |
| 308 |  | R8.2 复核与交接 总评材料与详细计划附录 | 2d | 2026-12-22 09:00 | 2026-12-23 18:00 | 9d | start no earlier than 2026-12-22 09:00 |
| 309 |  | R8.4 复核与交接 总评反馈处理与归档 | 2d | 2026-12-31 09:00 | 2027-01-04 18:00 | 2d | start no earlier than 2026-12-31 09:00 |
| 310 | K | **K 课程里程碑** | 59d | 2026-10-14 09:00 | 2027-01-06 09:00 | 1d |  |
| 311 |  | K01 项目计划课堂评审 | 0d | 2026-10-14 09:00 | 2026-10-14 09:00 | 60d | start no earlier than 2026-10-14 09:00 |
| 312 |  | K02 可行性报告课堂节点 | 0d | 2026-10-21 09:00 | 2026-10-21 09:00 | 55d | start no earlier than 2026-10-21 09:00 |
| 313 |  | K03 SRS需求课堂评审 | 0d | 2026-10-28 09:00 | 2026-10-28 09:00 | 50d | start no earlier than 2026-10-28 09:00 |
| 314 |  | K04 SRS修订与需求复审 | 0d | 2026-11-04 09:00 | 2026-11-04 09:00 | 45d | start no earlier than 2026-11-04 09:00 |
| 315 |  | K05 总体设计课堂节点 | 0d | 2026-11-11 09:00 | 2026-11-11 09:00 | 40d | start no earlier than 2026-11-11 09:00 |
| 316 |  | K06 详细设计课堂节点 | 0d | 2026-11-18 09:00 | 2026-11-18 09:00 | 35d | start no earlier than 2026-11-18 09:00 |
| 317 |  | K07 设计评审与翻转PPT1 | 0d | 2026-11-25 09:00 | 2026-11-25 09:00 | 30d | start no earlier than 2026-11-25 09:00 |
| 318 |  | K08 代码用例与翻转PPT2 | 0d | 2026-12-02 09:00 | 2026-12-02 09:00 | 25d | start no earlier than 2026-12-02 09:00 |
| 319 |  | K09 系统测试报告课堂节点 | 0d | 2026-12-09 09:00 | 2026-12-09 09:00 | 20d | start no earlier than 2026-12-09 09:00 |
| 320 |  | K10 测试报告修订课堂评审 | 0d | 2026-12-16 09:00 | 2026-12-16 09:00 | 15d | start no earlier than 2026-12-16 09:00 |
| 321 |  | K11 项目总结与总评PPT | 0d | 2026-12-30 09:00 | 2026-12-30 09:00 | 5d | start no earlier than 2026-12-30 09:00 |
| 322 |  | K12 课程收尾与交付确认 | 0d | 2027-01-06 09:00 | 2027-01-06 09:00 | 1d | start no earlier than 2027-01-06 09:00 |

## Version 2 (saved 2026-11-11)

Note of the change: Merge f9f0718d018f1b2d6730d6bc8e4fb5914a35c262 into b803ecd029a416825558286e8362cb4cf005b5f4

Last finish stays 2027-01-06.

Added:

| ID | Task | Duration | Start | Finish | Predecessors | Constraint | Resources |
| --- | --- | --- | --- | --- | --- | --- | --- |
| 146 | **4.1 设想供选择的方案** | 0.25d | 2026-10-26 09:00 | 2026-10-26 11:00 |  | start no earlier than 2026-10-26 09:00 |  |
| 147 | 4.1.1 梳理候选架构与数据方案 | 0.12d | 2026-10-26 09:00 | 2026-10-26 10:00 | 100 |  | 王晨 [40%] |
| 148 | 4.1.2 形成方案清单并判断技术可行性 | 0.12d | 2026-10-26 10:00 | 2026-10-26 11:00 | 147 |  | 王晨 [40%] |
| 149 | **4.2 选取合理的方案** | 0.25d | 2026-10-26 11:00 | 2026-10-26 13:00 |  |  |  |
| 150 | 4.2.1 编制低成本、中等与高成本方案 | 0.12d | 2026-10-26 11:00 | 2026-10-26 12:00 | 148 |  | 王晨 [40%] |
| 151 | 4.2.2 比较工程规模、成本效益与进度 | 0.12d | 2026-10-26 12:00 | 2026-10-26 13:00 | 150 |  | 王晨 [40%] |
| 152 | **4.3 推荐最佳方案** | 0.25d | 2026-10-26 14:00 | 2026-10-26 16:00 |  |  |  |
| 153 | 4.3.1 形成推荐方案与决策理由 | 0.12d | 2026-10-26 14:00 | 2026-10-26 15:00 | 151 |  | 王晨 [30%] |
| 154 | 4.3.2 记录被否方案与主要风险 | 0.12d | 2026-10-26 15:00 | 2026-10-26 16:00 | 153 |  | 王晨 [30%] |
| 155 | **4.4 功能分解** | 0.25d | 2026-10-26 16:00 | 2026-10-26 18:00 |  |  |  |
| 156 | 4.4.1 依据数据流图分解功能层次 | 0.12d | 2026-10-26 16:00 | 2026-10-26 17:00 | 154 |  | 王晨 [40%] |
| 157 | 4.4.2 建立功能与模块对应关系 | 0.12d | 2026-10-26 17:00 | 2026-10-26 18:00 | 156 |  | 王晨 [40%] |
| 158 | **4.5 设计软件结构** | 0.25d | 2026-10-27 09:00 | 2026-10-27 11:00 |  |  |  |
| 159 | 4.5.1 绘制层次图与结构图 | 0.12d | 2026-10-27 09:00 | 2026-10-27 10:00 | 157 |  | 王晨 [60%] |
| 160 | 4.5.2 检查扇入扇出、耦合与内聚 | 0.12d | 2026-10-27 10:00 | 2026-10-27 11:00 | 159 |  | 王晨 [60%] |
| 161 | **4.6 设计数据库** | 0.25d | 2026-10-27 11:00 | 2026-10-27 13:00 |  |  |  |
| 162 | 4.6.1 由ER图导出表结构与约束 | 0.12d | 2026-10-27 11:00 | 2026-10-27 12:00 | 160 |  | 王晨 [50%] |
| 163 | 4.6.2 核对索引、迁移与数据字典 | 0.12d | 2026-10-27 12:00 | 2026-10-27 13:00 | 162 |  | 王晨 [50%] |
| 164 | **4.7 制定测试计划** | 0.25d | 2026-10-27 14:00 | 2026-10-27 16:00 |  |  |  |
| 165 | 4.7.1 确定测试策略、范围与环境 | 0.12d | 2026-10-27 14:00 | 2026-10-27 15:00 | 163 |  | 刘景浩 [45%] |
| 166 | 4.7.2 编排测试进度与资源 | 0.12d | 2026-10-27 15:00 | 2026-10-27 16:00 | 165 |  | 刘景浩 [45%] |
| 167 | **4.8 书写总体设计文档** | 0.25d | 2026-10-27 16:00 | 2026-10-27 18:00 |  |  |  |
| 168 | 4.8.1 编写总体设计报告正文 | 0.12d | 2026-10-27 16:00 | 2026-10-27 17:00 | 166 |  | 王晨 [45%] |
| 169 | 4.8.2 整理结构图、接口与数据库设计 | 0.12d | 2026-10-27 17:00 | 2026-10-27 18:00 | 168 |  | 王晨 [45%] |
| 170 | **4.9 审查和复审** | 1d | 2026-11-05 09:00 | 2026-11-05 18:00 |  | start no earlier than 2026-11-05 09:00 |  |
| 171 | 4.9.1 技术审查并登记设计问题 | 0.5d | 2026-11-05 09:00 | 2026-11-05 13:00 | 178, 181, 184, 107 | start no earlier than 2026-11-05 09:00 | 王晨 [20%] |
| 172 | 4.9.2 管理复审并确认内部设计基线 | 0.5d | 2026-11-05 14:00 | 2026-11-05 18:00 | 171 | start no earlier than 2026-11-05 14:00 | 刘景浩 [37.5%] |
| 173 | **4.10 认证、内容、激励与治理详细设计** | 1.5d | 2026-10-29 09:00 | 2026-10-30 13:00 |  |  |  |
| 174 | 4.10.1 细化认证、文章与治理状态 | 0.5d | 2026-10-29 09:00 | 2026-10-29 13:00 | 169 | start no earlier than 2026-10-29 09:00 | 王晨 [62.5%] |
| 175 | 4.10.2 细化币事务、隐私与异常处理 | 0.5d | 2026-10-30 09:00 | 2026-10-30 13:00 | 174 | start no earlier than 2026-10-30 09:00 | 王晨 [50%] |
| 176 | **4.11 双端浏览与创作详细设计** | 3d | 2026-10-29 09:00 | 2026-11-02 18:00 |  |  |  |
| 177 | 4.11.1 设计网页Markdown与移动图文 | 1d | 2026-10-29 09:00 | 2026-10-29 18:00 | 169 | start no earlier than 2026-10-29 09:00 | 刘景浩 [31.2%] |
| 178 | 4.11.2 设计图片、草稿与跨端编辑流程 | 2d | 2026-10-30 09:00 | 2026-11-02 18:00 | 177 | start no earlier than 2026-10-30 09:00 | 刘景浩 [12.5%] |
| 179 | **4.12 部署、备份与恢复详细设计** | 2d | 2026-11-02 09:00 | 2026-11-03 18:00 |  |  |  |
| 180 | 4.12.1 定义运维接口、鉴权与白名单 | 1d | 2026-11-02 09:00 | 2026-11-02 18:00 | 175 | start no earlier than 2026-11-02 09:00 | 王晨 [31.2%] |
| 181 | 4.12.2 设计备份一致性、恢复与失败保护 | 1d | 2026-11-03 09:00 | 2026-11-03 18:00 | 180 | start no earlier than 2026-11-03 09:00 | 王晨 [25%] |
| 182 | **4.13 测试用例设计与数据准备** | 1d | 2026-11-03 09:00 | 2026-11-03 18:00 |  |  |  |
| 183 | 4.13.1 编制核心与异常验收用例 | 0.5d | 2026-11-03 09:00 | 2026-11-03 13:00 | 178, 175 | start no earlier than 2026-11-03 09:00 | 刘景浩 [62.5%] |
| 184 | 4.13.2 准备合成数据与性能脚本方案 | 0.5d | 2026-11-03 14:00 | 2026-11-03 18:00 | 183 | start no earlier than 2026-11-03 14:00 | 刘景浩 [31.2%]; 王晨 [18.8%] |
| 185 | **4.14 课堂设计反馈与模块调整** | 1d | 2026-11-26 09:00 | 2026-11-26 18:00 |  |  |  |
| 186 | 4.14.1 共同登记课堂设计意见 | 0.5d | 2026-11-26 09:00 | 2026-11-26 13:00 | 212, 221 | start no earlier than 2026-11-26 09:00 | 王晨 [30%]; 刘景浩 [30%] |
| 187 | 4.14.2 分别调整模块并共同复核 | 0.5d | 2026-11-26 14:00 | 2026-11-26 18:00 | 186 | start no earlier than 2026-11-26 14:00 | 王晨 [30%]; 刘景浩 [30%] |

Removed: 146 4.1 系统架构、接口与数据库设计; 147 4.1.1 设计业务模块与接口契约; 148 4.1.2 设计数据关系与本机部署边界; 149 4.2 认证、内容、激励与治理设计; 150 4.2.1 细化认证文章与治理状态; 151 4.2.2 细化币事务、隐私及异常处理; 152 4.3 双端浏览与创作详细设计; 153 4.3.1 设计网页Markdown与移动图文; 154 4.3.2 设计图片、草稿和跨端编辑流程; 155 4.4 部署、备份与恢复详细设计; 156 4.4.1 定义运维接口、鉴权与白名单; 157 4.4.2 设计备份一致性、恢复与失败保护; 158 4.5 内部设计评审与文档基线; 159 4.5.1 共同核对总体与详细设计; 160 4.5.2 共同评审并确认内部设计基线; 161 4.6 测试用例设计与数据准备; 162 4.6.1 编制核心与异常验收用例; 163 4.6.2 准备合成数据和性能脚本方案; 164 4.7 课堂设计反馈与模块调整; 165 4.7.1 共同登记课堂设计意见; 166 4.7.2 分别调整模块并共同复核

Changed:

| ID | Task | Predecessors |
| --- | --- | --- |
| 190 | 5.1.1 搭建模块骨架与环境配置 | 4.5.2 共同评审并确认内部设计基线 → 172 |
| 199 | 5.4.1 实现双端筛选与阅读界面 | 4.5.2 共同评审并确认内部设计基线 → 172 |
| 223 | 5.12.1 双方接通真实接口与跨端链路 | 4.7.2 分别调整模块并共同复核 → 187 |

## Version 3 (saved 2026-11-13)

Note of the change: docs(wc): align course milestones and review navigation

Last finish stays 2027-01-06.

Added:

| ID | Task | Duration | Start | Finish | Predecessors | Constraint | Resources |
| --- | --- | --- | --- | --- | --- | --- | --- |
| 152 | 4.2.3 编制候选实现进度 | 0.19d | 2026-10-26 16:30 | 2026-10-26 18:00 | 151 | start no earlier than 2026-10-26 16:30 | 王晨 [33.3%]; 刘景浩 [33.3%] |
| 161 | 4.5.3 完成变换与事务结构映射 | 0.5d | 2026-10-28 14:00 | 2026-10-28 18:00 | 160 | start no earlier than 2026-10-28 14:00 | 王晨 [50%]; 刘景浩 [18.8%] |
| 162 | 4.5.4 用设计原理与启发规则精化 | 0.38d | 2026-10-29 09:00 | 2026-10-29 12:00 | 161 | start no earlier than 2026-10-29 09:00 | 王晨 [41.7%]; 刘景浩 [16.7%] |
| 163 | 4.5.5 导出接口和数据并复查 | 0.38d | 2026-10-29 14:00 | 2026-10-29 17:00 | 162 | start no earlier than 2026-10-29 14:00 | 王晨 [41.7%]; 刘景浩 [25%] |
| 173 | 4.8.3 汇编详细实现计划 | 0.38d | 2026-11-04 09:00 | 2026-11-04 12:00 | 172 | start no earlier than 2026-11-04 09:00 | 王晨 [25%]; 刘景浩 [16.7%] |
| 174 | 4.8.4 统稿总体设计并核对配套材料 | 0.38d | 2026-11-04 14:00 | 2026-11-04 17:00 | 171, 173 | start no earlier than 2026-11-04 14:00 | 王晨 [33.3%]; 刘景浩 [25%] |
| 190 | 4.13.3 详细设计与测试用例交叉复核 | 0.5d | 2026-11-13 09:00 | 2026-11-13 13:00 | 189 | start no earlier than 2026-11-13 09:00 | 王晨 [25%]; 刘景浩 [25%] |
| 194 | 4.14.3 分模块修订设计与测试 | 0.5d | 2026-11-26 09:00 | 2026-11-26 13:00 | 193 | start no earlier than 2026-11-26 09:00 | 王晨 [37.5%]; 刘景浩 [37.5%] |
| 195 | 4.14.4 交叉复核并交接联调 | 0.5d | 2026-11-26 14:00 | 2026-11-26 18:00 | 194 | start no earlier than 2026-11-26 14:00 | 王晨 [25%]; 刘景浩 [25%] |
| 233 | 5.12.3 封存代码清单、用例与实现证据 | 0.5d | 2026-11-27 14:00 | 2026-11-27 18:00 | 232 | start no earlier than 2026-11-27 14:00 | 王晨 [31.2%]; 刘景浩 [31.2%] |
| 247 | 6.4.3 核对实际使用设备与网络 | 0.38d | 2026-12-03 09:00 | 2026-12-03 12:00 | 246 | start no earlier than 2026-12-03 09:00 | 刘景浩 [58.3%] |
| 256 | 6.7.2 内部验收并封版系统测试报告 | 0.5d | 2026-12-04 14:00 | 2026-12-04 18:00 | 255 | start no earlier than 2026-12-04 14:00 | 王晨 [37.5%]; 刘景浩 [37.5%] |
| 343 | K00 课程启动与选题 | 0d | 2026-09-16 09:00 | 2026-09-16 09:00 |  | start no earlier than 2026-09-16 09:00 |  |
| 344 | K00A 预备作业与项目介绍 | 0d | 2026-09-23 09:00 | 2026-09-23 09:00 |  | start no earlier than 2026-09-23 09:00 |  |
| 345 | K00B 项目计划及 PPT | 0d | 2026-09-30 09:00 | 2026-09-30 09:00 |  | start no earlier than 2026-09-30 09:00 |  |
| 356 | K10A 面向对象方法学引论 | 0d | 2026-12-23 09:00 | 2026-12-23 09:00 |  | start no earlier than 2026-12-23 09:00 |  |

Removed: 154 4.3.2 记录被否方案与主要风险

Changed:

| ID | Task | Start | Finish | Duration | Total float | Predecessors | Other |
| --- | --- | --- | --- | --- | --- | --- | --- |
| 146 | **4.1 设想供选择的方案** |  | 2026-10-26 11:00 → 2026-10-26 13:00 | 0.25d → 0.5d | 2d → 3.5d |  | constraint start no earlier than 2026-10-26 09:00 → none |
| 147 | 4.1.1 复查需求DFD与系统边界 |  | 2026-10-26 10:00 → 2026-10-26 11:00 | 0.12d → 0.25d | 2d → 3.5d |  | was named 4.1.1 梳理候选架构与数据方案; constraint none → start no earlier than 2026-10-26 09:00; resources 王晨 [40%] → 王晨 [37.5%] |
| 148 | 4.1.2 形成处理分组与排除条件 | 2026-10-26 10:00 → 2026-10-26 11:00 | 2026-10-26 11:00 → 2026-10-26 13:00 | 0.12d → 0.25d | 2d → 3.5d |  | was named 4.1.2 形成方案清单并判断技术可行性; constraint none → start no earlier than 2026-10-26 11:00; resources 王晨 [40%] → 王晨 [37.5%]; 刘景浩 [25%] |
| 149 | **4.2 选取合理的方案** | 2026-10-26 11:00 → 2026-10-26 14:00 | 2026-10-26 13:00 → 2026-10-26 18:00 | 0.25d → 0.5d | 2d → 3.5d |  |  |
| 150 | 4.2.1 整理三方案流程与物理元素 | 2026-10-26 11:00 → 2026-10-26 14:00 | 2026-10-26 12:00 → 2026-10-26 15:30 | 0.12d → 0.19d | 2d → 3.5d |  | was named 4.2.1 编制低成本、中等与高成本方案; constraint none → start no earlier than 2026-10-26 14:00; resources 王晨 [40%] → 王晨 [50%]; 刘景浩 [33.3%] |
| 151 | 4.2.2 估算成本和效益 | 2026-10-26 12:00 → 2026-10-26 15:30 | 2026-10-26 13:00 → 2026-10-26 16:30 |  | 2d → 3.5d |  | was named 4.2.2 比较工程规模、成本效益与进度; constraint none → start no earlier than 2026-10-26 15:30; resources 王晨 [40%] → 王晨 [75%] |
| 153 | **4.3 推荐最佳方案** | 2026-10-26 14:00 → 2026-10-27 09:00 (+1d) | 2026-10-26 16:00 → 2026-10-27 11:00 (+1d) |  | 2d → 3.5d |  |  |
| 154 | 4.3.1 推荐方案并记录取舍 | 2026-10-26 14:00 → 2026-10-27 09:00 (+1d) | 2026-10-26 15:00 → 2026-10-27 11:00 (+1d) | 0.12d → 0.25d | 2d → 3.5d | 151 → 152 | was named 4.3.1 形成推荐方案与决策理由; constraint none → start no earlier than 2026-10-27 09:00; resources 王晨 [30%] → 王晨 [37.5%]; 刘景浩 [25%] |
| 155 | **4.4 按DFD分解功能与过程** | 2026-10-26 16:00 → 2026-10-27 11:00 (+1d) | 2026-10-26 18:00 → 2026-10-27 17:00 (+1d) | 0.25d → 0.62d | 2d → 3.5d |  | was named 4.4 功能分解 |
| 156 | 4.4.1 逐项追踪18个DFD处理 | 2026-10-26 16:00 → 2026-10-27 11:00 (+1d) | 2026-10-26 17:00 → 2026-10-27 13:00 (+1d) | 0.12d → 0.25d | 2d → 3.5d | 4.3.2 记录被否方案与主要风险 → 154 | was named 4.4.1 依据数据流图分解功能层次; constraint none → start no earlier than 2026-10-27 11:00; resources 王晨 [40%] → 王晨 [62.5%] |
| 157 | 4.4.2 拆分四条复杂过程与交接 | 2026-10-26 17:00 → 2026-10-27 14:00 (+1d) | 2026-10-26 18:00 → 2026-10-27 17:00 (+1d) | 0.12d → 0.38d | 2d → 3.5d |  | was named 4.4.2 建立功能与模块对应关系; constraint none → start no earlier than 2026-10-27 14:00; resources 王晨 [40%] → 王晨 [33.3%]; 刘景浩 [25%] |
| 158 | **4.5 按数据流五步设计软件结构** | 2026-10-27 09:00 → 2026-10-28 09:00 (+1d) | 2026-10-27 11:00 → 2026-10-29 17:00 (+2d) | 0.25d → 1.88d | 2d → 3.25d |  | was named 4.5 设计软件结构 |
| 159 | 4.5.1 精化公开阅读和管理数据流 | 2026-10-27 09:00 → 2026-10-28 09:00 (+1d) | 2026-10-27 10:00 → 2026-10-28 11:00 (+1d) | 0.12d → 0.25d | 2d → 3.38d |  | was named 4.5.1 绘制层次图与结构图; constraint none → start no earlier than 2026-10-28 09:00; resources 王晨 [60%] → 王晨 [50%] |
| 160 | 4.5.2 判定流类型与输入输出边界 | 2026-10-27 10:00 → 2026-10-28 11:00 (+1d) | 2026-10-27 11:00 → 2026-10-28 13:00 (+1d) | 0.12d → 0.25d | 2d → 3.38d |  | was named 4.5.2 检查扇入扇出、耦合与内聚; constraint none → start no earlier than 2026-10-28 11:00; resources 王晨 [60%] → 王晨 [37.5%] |
| 164 | **4.6 设计并核对数据库** | 2026-10-27 11:00 → 2026-10-28 09:00 (+1d) | 2026-10-27 13:00 → 2026-10-29 18:00 (+2d) | 0.25d → 2d | 2d → 3.12d |  | was named 4.6 设计数据库 |
| 165 | 4.6.1 核对逻辑实体与物理关系 | 2026-10-27 11:00 → 2026-10-28 09:00 (+1d) | 2026-10-27 12:00 → 2026-10-28 12:00 (+1d) | 0.12d → 0.38d | 2d → 4.25d | 160 → 157 | was named 4.6.1 由ER图导出表结构与约束; constraint none → start no earlier than 2026-10-28 09:00 |
| 166 | 4.6.2 核对迁移、字段、约束与索引 | 2026-10-27 12:00 → 2026-10-29 14:00 (+2d) | 2026-10-27 13:00 → 2026-10-29 18:00 (+2d) | 0.12d → 0.5d | 2d → 3.12d |  | was named 4.6.2 核对索引、迁移与数据字典; constraint none → start no earlier than 2026-10-29 14:00; resources 王晨 [50%] → 王晨 [37.5%]; 刘景浩 [12.5%] |
| 167 | **4.7 制定三级测试计划** | 2026-10-27 14:00 → 2026-11-02 09:00 (+6d) | 2026-10-27 16:00 → 2026-11-02 17:00 (+6d) | 0.25d → 0.88d |  |  | was named 4.7 制定测试计划 |
| 168 | 4.7.1 编制三级测试策略与方案 | 2026-10-27 14:00 → 2026-11-02 09:00 (+6d) | 2026-10-27 15:00 → 2026-11-02 12:00 (+6d) | 0.12d → 0.38d | 2d → 2.12d | 166 → 163, 166 | was named 4.7.1 确定测试策略、范围与环境; constraint none → start no earlier than 2026-11-02 09:00; resources 刘景浩 [45%] → 王晨 [16.7%]; 刘景浩 [41.7%] |
| 169 | 4.7.2 编制预期结果、取证与进度 | 2026-10-27 15:00 → 2026-11-02 14:00 (+6d) | 2026-10-27 16:00 → 2026-11-02 17:00 (+6d) | 0.12d → 0.38d |  |  | was named 4.7.2 编排测试进度与资源; constraint none → start no earlier than 2026-11-02 14:00; resources 刘景浩 [45%] → 王晨 [25%]; 刘景浩 [33.3%] |
| 170 | **4.8 汇编总体设计与五份配套文档** | 2026-10-27 16:00 → 2026-11-03 09:00 (+7d) | 2026-10-27 18:00 → 2026-11-04 17:00 (+8d) | 0.25d → 1.88d | 2d → 1.12d |  | was named 4.8 书写总体设计文档 |
| 171 | 4.8.1 汇编系统说明与用户手册 | 2026-10-27 16:00 → 2026-11-03 09:00 (+7d) | 2026-10-27 17:00 → 2026-11-03 12:00 (+7d) | 0.12d → 0.38d | 2d → 2.25d | 169 → 163 | was named 4.8.1 编写总体设计报告正文; constraint none → start no earlier than 2026-11-03 09:00; resources 王晨 [45%] → 王晨 [16.7%]; 刘景浩 [41.7%] |
| 172 | 4.8.2 汇编测试计划与数据库设计结果 | 2026-10-27 17:00 → 2026-11-03 14:00 (+7d) | 2026-10-27 18:00 → 2026-11-03 17:00 (+7d) | 0.12d → 0.38d | 2d → 1.38d | 171 → 169, 166 | was named 4.8.2 整理结构图、接口与数据库设计; constraint none → start no earlier than 2026-11-03 14:00; resources 王晨 [45%] → 王晨 [33.3%]; 刘景浩 [25%] |
| 175 | **4.9 技术审查与管理复审** |  |  |  | 0d → 1d |  | was named 4.9 审查和复审; constraint start no earlier than 2026-11-05 09:00 → none |
| 176 | 4.9.1 技术审查并登记问题 |  |  |  | 0d → 1d | 183, 186, 189, 107 → 174, 107 | was named 4.9.1 技术审查并登记设计问题; resources 王晨 [20%] → 王晨 [31.2%]; 刘景浩 [18.8%] |
| 177 | 4.9.2 管理复审与内部基线交接 |  |  |  | 0d → 1d |  | was named 4.9.2 管理复审并确认内部设计基线; resources 刘景浩 [37.5%] → 王晨 [25%]; 刘景浩 [18.8%] |
| 178 | **4.10 业务过程、判定和复杂度设计** | 2026-10-29 09:00 → 2026-11-09 09:00 (+11d) | 2026-10-30 13:00 → 2026-11-10 13:00 (+11d) |  | 1.5d → 2d |  | was named 4.10 认证、内容、激励与治理详细设计 |
| 179 | 4.10.1 细化认证与发布状态和过程 | 2026-10-29 09:00 → 2026-11-09 09:00 (+11d) | 2026-10-29 13:00 → 2026-11-09 13:00 (+11d) |  | 2d → 2.5d | 172 → 177 | was named 4.10.1 细化认证、文章与治理状态; constraint start no earlier than 2026-10-29 09:00 → start no earlier than 2026-11-09 09:00; resources 王晨 [62.5%] → 王晨 [43.8%] |
| 180 | 4.10.2 细化账本及治理并计算复杂度 | 2026-10-30 09:00 → 2026-11-10 09:00 (+11d) | 2026-10-30 13:00 → 2026-11-10 13:00 (+11d) |  | 1.5d → 2d |  | was named 4.10.2 细化币事务、隐私与异常处理; constraint start no earlier than 2026-10-30 09:00 → start no earlier than 2026-11-10 09:00; resources 王晨 [50%] → 王晨 [43.8%]; 刘景浩 [18.8%] |
| 181 | **4.11 双端人机界面与交互详细设计** | 2026-10-29 09:00 → 2026-11-09 09:00 (+11d) | 2026-11-02 18:00 → 2026-11-10 18:00 (+8d) | 3d → 2d | 1d → 1.5d |  | was named 4.11 双端浏览与创作详细设计 |
| 182 | 4.11.1 细化小程序和网页交互 | 2026-10-29 09:00 → 2026-11-09 09:00 (+11d) | 2026-10-29 18:00 → 2026-11-09 13:00 (+11d) | 1d → 0.5d | 1d → 2.5d | 172 → 177 | was named 4.11.1 设计网页Markdown与移动图文; constraint start no earlier than 2026-10-29 09:00 → start no earlier than 2026-11-09 09:00; resources 刘景浩 [31.2%] → 刘景浩 [50%] |
| 183 | 4.11.2 细化图片、草稿和跨端冲突 | 2026-10-30 09:00 → 2026-11-10 14:00 (+11d) | 2026-11-02 18:00 → 2026-11-10 18:00 (+8d) | 2d → 0.5d | 1d → 1.5d |  | was named 4.11.2 设计图片、草稿与跨端编辑流程; constraint start no earlier than 2026-10-30 09:00 → start no earlier than 2026-11-10 14:00; resources 刘景浩 [12.5%] → 王晨 [12.5%]; 刘景浩 [43.8%] |
| 184 | **4.12 独立运维与备份恢复详细设计** | 2026-11-02 09:00 → 2026-11-11 09:00 (+9d) | 2026-11-03 18:00 → 2026-11-11 18:00 (+8d) | 2d → 1d | 1d → 0.5d |  | was named 4.12 部署、备份与恢复详细设计 |
| 185 | 4.12.1 细化独立运维授权与任务状态 | 2026-11-02 09:00 → 2026-11-11 09:00 (+9d) | 2026-11-02 18:00 → 2026-11-11 13:00 (+9d) | 1d → 0.5d | 1d → 0.5d | 180 → 177 | was named 4.12.1 定义运维接口、鉴权与白名单; constraint start no earlier than 2026-11-02 09:00 → start no earlier than 2026-11-11 09:00; resources 王晨 [31.2%] → 王晨 [18.8%]; 刘景浩 [37.5%] |
| 186 | 4.12.2 细化备份结构、恢复和回退 | 2026-11-03 09:00 → 2026-11-11 14:00 (+8d) | 2026-11-03 18:00 → 2026-11-11 18:00 (+8d) | 1d → 0.5d | 1d → 0.5d |  | was named 4.12.2 设计备份一致性、恢复与失败保护; constraint start no earlier than 2026-11-03 09:00 → start no earlier than 2026-11-11 14:00; resources 王晨 [25%] → 王晨 [18.8%]; 刘景浩 [37.5%] |
| 187 | **4.13 三级用例、数据和详细设计复核** | 2026-11-03 09:00 → 2026-11-12 09:00 (+9d) | 2026-11-03 18:00 → 2026-11-13 13:00 (+10d) | 1d → 1.5d | 1d → 0.5d |  | was named 4.13 测试用例设计与数据准备 |
| 188 | 4.13.1 编制单元与白盒用例 | 2026-11-03 09:00 → 2026-11-12 09:00 (+9d) | 2026-11-03 13:00 → 2026-11-12 13:00 (+9d) |  | 1d → 0.5d | 183, 180 → 180, 183, 186 | was named 4.13.1 编制核心与异常验收用例; constraint start no earlier than 2026-11-03 09:00 → start no earlier than 2026-11-12 09:00; resources 刘景浩 [62.5%] → 王晨 [37.5%]; 刘景浩 [31.2%] |
| 189 | 4.13.2 编制集成系统用例与数据 | 2026-11-03 14:00 → 2026-11-12 14:00 (+9d) | 2026-11-03 18:00 → 2026-11-12 18:00 (+9d) |  | 1d → 0.5d |  | was named 4.13.2 准备合成数据与性能脚本方案; constraint start no earlier than 2026-11-03 14:00 → start no earlier than 2026-11-12 14:00; resources 刘景浩 [31.2%]; 王晨 [18.8%] → 王晨 [37.5%]; 刘景浩 [43.8%] |
| 191 | **4.14 设计评审反馈与修订交接** | 2026-11-26 09:00 → 2026-11-20 09:00 (-6d) |  | 1d → 5d |  |  | was named 4.14 课堂设计反馈与模块调整 |
| 192 | 4.14.1 整理提交前设计修订 | 2026-11-26 09:00 → 2026-11-20 09:00 (-6d) | 2026-11-26 13:00 → 2026-11-20 13:00 (-6d) |  | 0d → 0.5d | 220, 229 → 190 | was named 4.14.1 共同登记课堂设计意见; constraint start no earlier than 2026-11-26 09:00 → start no earlier than 2026-11-20 09:00; resources 王晨 [30%]; 刘景浩 [30%] → 王晨 [25%]; 刘景浩 [25%] |
| 193 | 4.14.2 登记课堂设计意见及影响 | 2026-11-26 14:00 → 2026-11-25 14:00 (-1d) | 2026-11-26 18:00 → 2026-11-25 18:00 (-1d) |  |  |  | was named 4.14.2 分别调整模块并共同复核; constraint start no earlier than 2026-11-26 14:00 → start no earlier than 2026-11-25 14:00; resources 王晨 [30%]; 刘景浩 [30%] → 王晨 [18.8%]; 刘景浩 [18.8%] |
| 230 | **5.12 联调、代码用例证据与候选版本** |  |  |  |  |  | was named 5.12 系统联调、构建与实现基线 |
| 231 | 5.12.1 联通真实接口与跨端链路 |  | 2026-11-27 13:00 → 2026-11-27 11:00 | 0.5d → 0.25d |  | 193 → 195, 202, 205, 208, 211, 214, 217, 220, 223, 226, 229 | was named 5.12.1 双方接通真实接口与跨端链路; resources 王晨 [37.5%]; 刘景浩 [37.5%] → 王晨 [87.5%]; 刘景浩 [87.5%] |
| 232 | 5.12.2 复核程序清单、代码走查和单元结果 | 2026-11-27 14:00 → 2026-11-27 11:00 | 2026-11-27 18:00 → 2026-11-27 13:00 | 0.5d → 0.25d |  |  | was named 5.12.2 构建候选版本并归档实现证据; constraint start no earlier than 2026-11-27 14:00 → start no earlier than 2026-11-27 11:00; resources 王晨 [37.5%]; 刘景浩 [37.5%] → 王晨 [62.5%]; 刘景浩 [62.5%] |
| 234 | **6 综合测试** |  | 2026-12-08 18:00 → 2026-12-08 13:00 | 7d → 6.5d | 0d → 0.5d |  |  |
| 235 | **6.1 核心系统及真实MySQL集成测试** |  | 2026-12-01 18:00 → 2026-12-01 13:00 | 2d → 1.5d | 0d → 0.62d |  | was named 6.1 功能、接口与集成测试 |
| 236 | 6.1.1 执行核心系统场景与角色流程 |  | 2026-11-30 18:00 → 2026-11-30 13:00 | 1d → 0.5d | 0d → 1.12d | 232 → 233 | was named 6.1.1 执行角色及核心业务功能用例; resources 刘景浩 [15%] → 王晨 [12.5%]; 刘景浩 [50%] |
| 237 | 6.1.2 执行真实MySQL和接口集成 |  | 2026-12-01 18:00 → 2026-12-01 13:00 | 1d → 0.5d | 0d → 0.62d |  | was named 6.1.2 执行接口、集成和失败场景; resources 刘景浩 [18.8%] → 王晨 [43.8%]; 刘景浩 [25%] |
| 238 | **6.2 正常负载与性能指标** | 2026-11-30 09:00 → 2026-11-30 14:00 |  | 2d → 1.5d |  |  | was named 6.2 性能与负载测试 |
| 239 | 6.2.1 固定环境执行30并发负载 | 2026-11-30 09:00 → 2026-11-30 14:00 |  | 1d → 0.5d | 0d → 0.5d | 232 → 233 | constraint start no earlier than 2026-11-30 09:00 → start no earlier than 2026-11-30 14:00; resources 王晨 [15%] → 王晨 [50%] |
| 240 | 6.2.2 分析常规负载并核对阈值 | 2026-12-01 09:00 → 2026-12-01 14:00 |  | 1d → 0.5d |  |  | was named 6.2.2 分析P95、错误率与资源占用; constraint start no earlier than 2026-12-01 09:00 → start no earlier than 2026-12-01 14:00; resources 王晨 [18.8%] → 王晨 [31.2%] |
| 241 | **6.3 压力、稳定性及降载恢复** |  |  |  |  |  | was named 6.3 压力与稳定性测试 |
| 242 | 6.3.1 执行阶梯压力与边界探测 |  |  |  |  |  | was named 6.3.1 执行阶梯压力寻找容量边界; resources 王晨 [30%] → 王晨 [43.8%] |
| 243 | 6.3.2 执行稳定性与降载恢复 |  |  |  |  |  | resources 王晨 [37.5%] → 王晨 [50%] |
| 244 | **6.4 权限、双端兼容及目标环境** |  | 2026-12-02 18:00 → 2026-12-03 12:00 (+1d) | 1d → 1.38d | 0d → 0.12d |  | was named 6.4 安全权限与双端兼容测试 |
| 245 | 6.4.1 验证角色隔离与隐私 |  |  |  | 0d → 0.12d |  | was named 6.4.1 执行越权隐私与危险输入检查; resources 刘景浩 [30%] → 王晨 [12.5%]; 刘景浩 [37.5%] |
| 246 | 6.4.2 验证双端浏览、编辑及图片 |  |  |  | 0d → 0.12d |  | was named 6.4.2 执行双端浏览编辑与图片兼容; resources 刘景浩 [37.5%] → 刘景浩 [50%] |
| 248 | **6.5 部署、停机与备份恢复** |  |  |  | 0.5d → 0d |  | was named 6.5 部署、故障与备份恢复验证 |
| 249 | 6.5.1 验证冷启动与停机运维入口 |  |  |  | 0.5d → 0d |  | was named 6.5.1 验证冷启动与网页运维操作; resources 王晨 [30%] → 王晨 [43.8%]; 刘景浩 [12.5%] |
| 250 | 6.5.2 验证隔离恢复和损坏备份拒绝 |  |  |  | 0.5d → 0d |  | was named 6.5.2 验证损坏备份、回退与恢复一致性; resources 王晨 [37.5%] → 王晨 [50%]; 刘景浩 [18.8%] |
| 251 | **6.6 缺陷处理、复测和回归** | 2026-12-03 09:00 → 2026-12-03 14:00 | 2026-12-04 13:00 → 2026-12-04 11:00 | 1.5d → 0.75d |  |  | was named 6.6 缺陷修复、复测与回归 |
| 252 | 6.6.1 按模块处理已登记缺陷 | 2026-12-03 09:00 → 2026-12-03 14:00 | 2026-12-03 13:00 → 2026-12-03 18:00 |  |  | 246, 243 → 247, 243 | was named 6.6.1 按模块分派缺陷并修复; constraint start no earlier than 2026-12-03 09:00 → start no earlier than 2026-12-03 14:00; resources 刘景浩 [31.2%]; 王晨 [31.2%] → 王晨 [31.2%]; 刘景浩 [37.5%] |
| 253 | 6.6.2 复测缺陷并执行关键回归 | 2026-12-03 14:00 → 2026-12-04 09:00 (+1d) | 2026-12-04 13:00 → 2026-12-04 11:00 | 1d → 0.25d |  | 252 → 252, 250 | was named 6.6.2 交叉复测原场景与相邻流程; constraint start no earlier than 2026-12-03 14:00 → start no earlier than 2026-12-04 09:00; resources 刘景浩 [18.8%] → 王晨 [62.5%]; 刘景浩 [62.5%] |
| 254 | **6.7 用户走查、内部验收及报告封版** | 2026-12-04 14:00 → 2026-12-04 11:00 |  | 0.5d → 0.75d |  |  | was named 6.7 测试报告与系统内部验收 |
| 255 | 6.7.1 组织目标用户走查与反馈登记 | 2026-12-04 14:00 → 2026-12-04 11:00 | 2026-12-04 18:00 → 2026-12-04 13:00 | 0.5d → 0.25d |  | 253, 250 → 253, 247 | was named 6.7.1 双方确认测试结论与交付限制; constraint start no earlier than 2026-12-04 14:00 → start no earlier than 2026-12-04 11:00; resources 王晨 [30%]; 刘景浩 [30%] → 王晨 [25%]; 刘景浩 [62.5%] |
| 257 | **6.8 测试报告复核及课堂说明** |  | 2026-12-08 18:00 → 2026-12-08 13:00 | 2d → 1.5d | 0d → 0.5d |  | was named 6.8 测试报告复核与提交准备 |
| 258 | 6.8.1 复核报告与证据链 |  | 2026-12-07 18:00 → 2026-12-07 13:00 | 1d → 0.5d | 0d → 1d | 255 → 256 | was named 6.8.1 复核测试报告与证据链; resources 王晨 [15%] → 王晨 [37.5%]; 刘景浩 [18.8%] |
| 259 | 6.8.2 整理课堂说明和测试修订 |  | 2026-12-08 18:00 → 2026-12-08 13:00 | 1d → 0.5d | 0d → 0.5d |  | was named 6.8.2 整理课堂测试汇报和已有修订; resources 王晨 [18.8%] → 王晨 [31.2%]; 刘景浩 [18.8%] |
| 342 | **K 课程里程碑** | 2026-10-14 09:00 → 2026-09-16 09:00 (-28d) |  | 59d → 74d |  |  |  |
| 346 | K01 项目计划评审 |  |  |  |  |  | was named K01 项目计划课堂评审 |

| ID | Task | Other |
| --- | --- | --- |
| 347 | K02 可行性研究 | was named K02 可行性报告课堂节点 |
| 348 | K03 需求分析与形式化说明 | was named K03 SRS需求课堂评审 |
| 349 | K04 项目需求评审 | was named K04 SRS修订与需求复审 |
| 350 | K05 总体设计 | was named K05 总体设计课堂节点 |
| 351 | K06 详细设计 | was named K06 详细设计课堂节点 |
| 352 | K07 项目设计评审 | was named K07 设计评审与翻转PPT1 |
| 353 | K08 实现与翻转1 | was named K08 代码用例与翻转PPT2 |
| 354 | K09 维护与翻转2 | was named K09 系统测试报告课堂节点 |
| 355 | K10 项目测试评审 | was named K10 测试报告修订课堂评审 |
| 357 | K11 面向对象分析、设计、实现 | was named K11 项目总结与总评PPT |
| 358 | K12 课程总结与收尾 | was named K12 课程收尾与交付确认 |
